Schedule from MS Project, 2022-12-01 to 2024-06-14, costs in ¥.

## Calendars

- 标准: Mon-Fri 08:00-12:00, 13:00-17:00; Sat-Sun off. Exceptions (off unless hours are given): 2022-12-31 to 2023-01-06 (春节), 2023-04-05 (清明节), 2023-06-22 to 2023-06-24 (端午节).

## Resources

| Resource | Rate | Cost per use |
| --- | --- | --- |
| 项目经理 | 175 | 700 |
| 系统分析员1 | 175 | 700 |
| 系统分析员2 | 175 | 700 |
| 系统架构师1 | 175 | 700 |
| 系统架构师2 | 175 | 700 |
| 数据库建模师1 | 175 | 700 |
| 数据库建模师2 | 175 | 700 |
| 数据库建模师3 | 175 | 700 |
| 数据库建模师4 | 175 | 700 |
| 数据库建模师5 | 175 | 700 |
| UI设计师1 | 150 | 600 |
| UI设计师2 | 150 | 600 |
| UI设计师3 | 150 | 600 |
| UI设计师4 | 150 | 600 |
| UI设计师5 | 150 | 600 |
| 软件设计师1 | 150 | 600 |
| 软件设计师2 | 150 | 600 |
| 软件设计师3 | 150 | 600 |
| 软件设计师4 | 150 | 600 |
| 软件设计师5 | 150 | 600 |
| 高级程序员1 | 150 | 600 |
| 高级程序员2 | 150 | 600 |
| 高级程序员3 | 150 | 600 |
| 高级程序员4 | 150 | 600 |
| 高级程序员5 | 150 | 600 |
| 程序员1 | 125 | 500 |
| 程序员2 | 125 | 500 |
| 程序员3 | 125 | 500 |
| 程序员4 | 125 | 500 |
| 程序员5 | 125 | 500 |
| 软件评测师1 | 150 | 600 |
| 软件评测师2 | 150 | 600 |
| 软件评测师3 | 150 | 600 |
| 软件评测师4 | 150 | 600 |
| 软件评测师5 | 150 | 600 |
| 软件测试工程师1 | 125 | 500 |
| 软件测试工程师2 | 125 | 500 |
| 软件测试工程师3 | 125 | 500 |
| 软件测试工程师5 | 125 | 500 |
| 配置管理员1 | 112.5 | 450 |
| 配置管理员2 | 112.5 | 450 |
| 配置管理员3 | 112.5 | 450 |
| 配置管理员4 | 112.5 | 450 |
| 配置管理员5 | 112.5 | 450 |
| 技术支持工程师1（售前） | 112.5 | 450 |
| 软件测试工程师4 | 125 | 500 |
| 技术支持工程师2（售前） | 137.5 | 550 |
| 技术支持工程师1( 售后) | 137.5 | 550 |
| 技术支持工程师2( 售后) | 125 | 500 |
| 技术支持工程师3( 售后) | 125 | 500 |
| 用户 |  |  |

## Schedule

| ID | WBS | Task | Type | Duration | Start | Finish | Predecessors | Total slack | Resources | Work | Cost |
| --- | --- | --- | --- | --- | --- | --- | --- | --- | --- | --- | --- |
| 1 | 1 | **大连海湾城物业服务管理平台** |  | 394d? | 2022-12-01 | 2024-06-14 |  | 0d |  | 32376h | 6,332,350 |
| 2 | 1.1 | **需求调研** |  | 13d? | 2022-12-01 | 2022-12-19 |  | 0d |  | 664h | 115,100 |
| 3 | 1.1.1 | 可行性分析 | manual | 5d? | 2022-12-01 | 2022-12-07 |  |  | 项目经理; 配置管理员1; 软件测试工程师1; 软件评测师1; 系统分析员1; 系统架构师1; 高级程序员1; 软件设计师1; 数据库建模师1 | 360h | 61,050 |
| 4 | 1.1.2 | 撰写可行性分析报告 |  | 5d? | 2022-12-08 | 2022-12-14 | 3 | 0d | 项目经理; 软件测试工程师1; 系统分析员1; 技术支持工程师1（售前）; 配置管理员1 | 200h | 30,800 |
| 5 | 1.1.3 | 评审 |  | 1d? | 2022-12-15 | 2022-12-15 | 4 | 0d | 项目经理; 软件设计师1; 软件测试工程师1; 软件评测师1; 程序员1; 数据库建模师1; 系统分析员1; 系统架构师1; UI设计师1; 高级程序员1; 技术支持工程师1( 售后); 技术支持工程师2（售前）; 配置管理员1 | 104h | 23,250 |
| 6 | 1.1.4 | 虚任务 |  | 2d | 2022-12-16 | 2022-12-19 | 5 | 381d |  |  |  |
| 7 | 1.2 | **需求获取** |  | 13d | 2022-12-16 | 2023-01-10 | 5 | 0d |  | 808h | 145,200 |
| 8 | 1.2.1 | 需求调研 | manual | 5d | 2022-12-16 | 2022-12-22 | 5 |  | 项目经理; 数据库建模师3; 软件设计师1; 配置管理员1; 软件测试工程师1; 程序员1; UI设计师2; 数据库建模师1; 系统分析员1; 系统架构师1 | 400h | 67,650 |
| 9 | 1.2.2 | 建立界面原型 | manual | 5d | 2022-12-23 | 2022-12-29 | 8 |  | 数据库建模师3; 项目经理; 数据库建模师4; 数据库建模师5; 技术支持工程师1（售前） | 200h | 35,750 |
| 10 | 1.2.3 | 界面原型确定 | manual | 3d | 2022-12-30 | 2023-01-10 | 9 |  | 项目经理; 数据库建模师3; 技术支持工程师1（售前） | 72h | 12,950 |
| 11 | 1.2.4 | 撰写需求规格说明 | manual | 2d | 2023-01-04 | 2023-01-05 | 10 |  | 项目经理; 软件测试工程师2; 系统分析员1; 技术支持工程师1（售前） | 64h | 11,750 |
| 12 | 1.2.5 | 评审 | manual | 1d | 2023-01-06 | 2023-01-06 | 11 |  | 项目经理; 数据库建模师3; 软件设计师1; 软件测试工程师1; 软件评测师1; 程序员1; 数据库建模师1; 系统分析员1; 系统架构师1 | 72h | 17,100 |
| 13 | 1.2.6 | 虚任务 | manual | 2d | 2023-01-09 | 2023-01-10 | 12 |  |  |  |  |
| 14 | 1.3 | **增量(一)系统设置** |  | 17d? | 2023-01-09 | 2023-01-31 | 12 | 0d |  | 1480h | 313,750 |
| 15 | 1.3.1 | **管理用户** |  | 15d? | 2023-01-09 | 2023-01-27 | 12 | 0d |  | 296h | 62,750 |
| 16 | 1.3.1.1 | 概要设计 |  | 2d | 2023-01-09 | 2023-01-10 | 12 | 0d | 项目经理; UI设计师1; 系统架构师1 | 48h | 10,000 |
| 17 | 1.3.1.2 | 撰写概要设计说明书 | manual | 1d | 2023-01-11 | 2023-01-11 | 16 |  | 软件测试工程师1; UI设计师1; 配置管理员1 | 24h | 4,650 |
| 18 | 1.3.1.3 | 数据库设计 | manual | 2d | 2023-01-12 | 2023-01-13 | 17 |  | 数据库建模师1 | 16h | 3,500 |
| 19 | 1.3.1.4 | 撰写数据库说明书 | manual | 1d | 2023-01-16 | 2023-01-16 | 18 |  | 软件测试工程师1; 数据库建模师1 | 16h | 3,600 |
| 20 | 1.3.1.5 | 界面设计 | manual | 2d | 2023-01-17 | 2023-01-18 | 19 |  | UI设计师1; 系统分析员1 | 32h | 6,500 |
| 21 | 1.3.1.6 | 撰写界面设计说明书 | manual | 1d | 2023-01-19 | 2023-01-19 | 20 |  | UI设计师1; 配置管理员1; 系统分析员1 | 24h | 5,250 |
| 22 | 1.3.1.7 | 撰写集成测试计划 | manual | 2d | 2023-01-20 | 2023-01-23 | 21 |  | 软件评测师1 | 16h | 3,000 |
| 23 | 1.3.1.8 | 撰写集成测试用例 | manual | 2d | 2023-01-24 | 2023-01-25 | 22 |  | 软件评测师1 | 16h | 3,000 |
| 24 | 1.3.1.9 | 评审 | manual | 1d | 2023-01-26 | 2023-01-26 | 23 |  | 项目经理; 软件设计师1; 软件测试工程师1; 软件评测师1; 程序员1; 数据库建模师1; 系统分析员1; 系统架构师1; UI设计师1; 高级程序员1; 技术支持工程师1( 售后); 技术支持工程师2（售前）; 配置管理员1 | 104h | 23,250 |
| 25 | 1.3.1.10 | 虚任务 | manual | 1d? | 2023-01-27 | 2023-01-27 | 24 |  |  |  |  |

| ID | WBS | Task | Type | Duration | Start | Finish | Predecessors | Total slack | Resources | Work | Cost |
| --- | --- | --- | --- | --- | --- | --- | --- | --- | --- | --- | --- |
| 26 | 1.3.2 | **管理角色** |  | 17d | 2023-01-09 | 2023-01-31 | 24 | 0d |  | 296h | 62,750 |
| 27 | 1.3.2.1 | 概要设计 | manual | 2d | 2023-01-09 | 2023-01-10 | 12 |  | 项目经理; UI设计师2; 系统架构师2 | 48h | 10,000 |
| 28 | 1.3.2.2 | 撰写概要设计说明书 | manual | 1d | 2023-01-11 | 2023-01-11 | 27 |  | 软件测试工程师2; UI设计师2; 配置管理员2 | 24h | 4,650 |
| 29 | 1.3.2.3 | 数据库设计 | manual | 2d | 2023-01-12 | 2023-01-13 | 28 |  | 数据库建模师2 | 16h | 3,500 |
| 30 | 1.3.2.4 | 撰写数据库说明书 | manual | 1d | 2023-01-16 | 2023-01-16 | 29 |  | 软件测试工程师2; 数据库建模师2 | 16h | 3,600 |
| 31 | 1.3.2.5 | 界面设计 | manual | 2d | 2023-01-17 | 2023-01-18 | 30 |  | UI设计师2; 系统分析员2 | 32h | 6,500 |
| 32 | 1.3.2.6 | 撰写界面设计说明书 | manual | 1d | 2023-01-19 | 2023-01-19 | 31 |  | UI设计师2; 配置管理员2; 系统分析员2 | 24h | 5,250 |
| 33 | 1.3.2.7 | 撰写集成测试计划 | manual | 2d | 2023-01-20 | 2023-01-23 | 32 |  | 软件评测师2 | 16h | 3,000 |
| 34 | 1.3.2.8 | 撰写集成测试用例 | manual | 2d | 2023-01-24 | 2023-01-25 | 33 |  | 软件评测师2 | 16h | 3,000 |
| 35 | 1.3.2.9 | 评审 |  | 1d | 2023-01-27 | 2023-01-27 | 34 | 0d | 项目经理; 软件设计师1; 软件测试工程师1; 软件评测师1; 程序员1; 数据库建模师1; 系统分析员1; 系统架构师1; UI设计师1; 高级程序员1; 技术支持工程师1( 售后); 技术支持工程师2（售前）; 配置管理员1 | 104h | 23,250 |
| 36 | 1.3.2.10 | 虚任务 | manual | 2d | 2023-01-30 | 2023-01-31 | 35 |  |  |  |  |
| 37 | 1.3.3 | **管理菜单** |  | 15d? | 2023-01-09 | 2023-01-27 | 36 | 0d |  | 296h | 62,750 |
| 38 | 1.3.3.1 | 概要设计 | manual | 2d | 2023-01-09 | 2023-01-10 | 12 |  | 项目经理; UI设计师3; 系统架构师1 | 48h | 10,000 |
| 39 | 1.3.3.2 | 撰写概要设计说明书 | manual | 1d | 2023-01-11 | 2023-01-11 | 38 |  | UI设计师3; 配置管理员3; 软件测试工程师3 | 24h | 4,650 |
| 40 | 1.3.3.3 | 数据库设计 | manual | 2d | 2023-01-12 | 2023-01-13 | 39 |  | 数据库建模师3 | 16h | 3,500 |
| 41 | 1.3.3.4 | 撰写数据库说明书 | manual | 1d | 2023-01-16 | 2023-01-16 | 40 |  | 软件测试工程师3; 数据库建模师3 | 16h | 3,600 |
| 42 | 1.3.3.5 | 界面设计 | manual | 2d | 2023-01-17 | 2023-01-18 | 41 |  | UI设计师3; 系统分析员1 | 32h | 6,500 |
| 43 | 1.3.3.6 | 撰写界面设计说明书 | manual | 1d | 2023-01-19 | 2023-01-19 | 42 |  | UI设计师3; 配置管理员3; 系统分析员1 | 24h | 5,250 |
| 44 | 1.3.3.7 | 撰写集成测试计划 | manual | 2d | 2023-01-20 | 2023-01-23 | 43 |  | 软件评测师3 | 16h | 3,000 |
| 45 | 1.3.3.8 | 撰写集成测试用例 | manual | 2d | 2023-01-24 | 2023-01-25 | 44 |  | 软件评测师3 | 16h | 3,000 |
| 46 | 1.3.3.9 | 评审 | manual | 1d | 2023-01-26 | 2023-01-26 | 45 |  | 项目经理; 软件设计师1; 软件测试工程师1; 软件评测师1; 程序员1; 数据库建模师1; 系统分析员1; 系统架构师1; UI设计师1; 高级程序员1; 技术支持工程师1( 售后); 技术支持工程师2（售前）; 配置管理员1 | 104h | 23,250 |
| 47 | 1.3.3.10 | 虚任务 | manual | 1d? | 2023-01-27 | 2023-01-27 | 46 |  |  |  |  |
| 48 | 1.3.4 | **管理权限** |  | 15d? | 2023-01-09 | 2023-01-27 | 46 | 0d |  | 296h | 62,750 |
| 49 | 1.3.4.1 | 概要设计 | manual | 2d | 2023-01-09 | 2023-01-10 | 12 |  | 项目经理; UI设计师4; 系统架构师2 | 48h | 10,000 |
| 50 | 1.3.4.2 | 撰写概要设计说明书 | manual | 1d | 2023-01-11 | 2023-01-11 | 49 |  | UI设计师4; 配置管理员4; 软件测试工程师4 | 24h | 4,650 |
| 51 | 1.3.4.3 | 数据库设计 | manual | 2d | 2023-01-12 | 2023-01-13 | 50 |  | 数据库建模师4 | 16h | 3,500 |
| 52 | 1.3.4.4 | 撰写数据库说明书 | manual | 1d | 2023-01-16 | 2023-01-16 | 51 |  | 软件测试工程师4; 数据库建模师4 | 16h | 3,600 |
| 53 | 1.3.4.5 | 界面设计 | manual | 2d | 2023-01-17 | 2023-01-18 | 52 |  | 系统分析员2; UI设计师4 | 32h | 6,500 |
| 54 | 1.3.4.6 | 撰写界面设计说明书 | manual | 1d | 2023-01-19 | 2023-01-19 | 53 |  | 系统分析员2; UI设计师4; 配置管理员4 | 24h | 5,250 |
| 55 | 1.3.4.7 | 撰写集成测试计划 | manual | 2d | 2023-01-20 | 2023-01-23 | 54 |  | 软件评测师4 | 16h | 3,000 |
| 56 | 1.3.4.8 | 撰写集成测试用例 | manual | 2d | 2023-01-24 | 2023-01-25 | 55 |  | 软件评测师4 | 16h | 3,000 |
| 57 | 1.3.4.9 | 评审 | manual | 1d | 2023-01-26 | 2023-01-26 | 56 |  | 项目经理; 软件设计师1; 软件测试工程师1; 软件评测师1; 程序员1; 数据库建模师1; 系统分析员1; 系统架构师1; UI设计师1; 高级程序员1; 技术支持工程师1( 售后); 技术支持工程师2（售前）; 配置管理员1 | 104h | 23,250 |
| 58 | 1.3.4.10 | 虚任务 | manual | 1d? | 2023-01-27 | 2023-01-27 | 57 |  |  |  |  |

| ID | WBS | Task | Type | Duration | Start | Finish | Predecessors | Total slack | Resources | Work | Cost |
| --- | --- | --- | --- | --- | --- | --- | --- | --- | --- | --- | --- |
| 59 | 1.3.5 | **管理系统日志** |  | 16d | 2023-01-09 | 2023-01-30 | 58 | 0d |  | 296h | 62,750 |
| 60 | 1.3.5.1 | 概要设计 | manual | 2d | 2023-01-09 | 2023-01-10 | 12 |  | 项目经理; UI设计师5; 系统架构师1 | 48h | 10,000 |
| 61 | 1.3.5.2 | 撰写概要设计说明书 | manual | 1d | 2023-01-11 | 2023-01-11 | 60 |  | UI设计师5; 配置管理员5; 软件测试工程师5 | 24h | 4,650 |
| 62 | 1.3.5.3 | 数据库设计 | manual | 2d | 2023-01-12 | 2023-01-13 | 61 |  | 数据库建模师5 | 16h | 3,500 |
| 63 | 1.3.5.4 | 撰写数据库说明书 | manual | 1d | 2023-01-16 | 2023-01-16 | 62 |  | 软件测试工程师5; 数据库建模师5 | 16h | 3,600 |
| 64 | 1.3.5.5 | 界面设计 | manual | 2d | 2023-01-17 | 2023-01-18 | 63 |  | 系统分析员2; UI设计师5 | 32h | 6,500 |
| 65 | 1.3.5.6 | 撰写界面设计说明书 | manual | 1d | 2023-01-19 | 2023-01-19 | 64 |  | 系统分析员2; UI设计师5; 配置管理员5 | 24h | 5,250 |
| 66 | 1.3.5.7 | 撰写集成测试计划 | manual | 2d | 2023-01-20 | 2023-01-23 | 65 |  | 软件评测师5 | 16h | 3,000 |
| 67 | 1.3.5.8 | 撰写集成测试用例 | manual | 2d | 2023-01-24 | 2023-01-25 | 66 |  | 软件评测师5 | 16h | 3,000 |
| 68 | 1.3.5.9 | 评审 | manual | 1d | 2023-01-26 | 2023-01-26 | 67 |  | 项目经理; 软件设计师1; 软件测试工程师1; 软件评测师1; 程序员1; 数据库建模师1; 系统分析员1; 系统架构师1; UI设计师1; 高级程序员1; 技术支持工程师1( 售后); 技术支持工程师2（售前）; 配置管理员1 | 104h | 23,250 |
| 69 | 1.3.5.10 | 虚任务 | manual | 2d | 2023-01-27 | 2023-01-30 | 68 |  |  |  |  |
| 70 | 1.4 | **增量(二)展示公司** |  | 16d? | 2023-01-27 | 2023-02-17 | 68 | 0d |  | 1480h | 313,750 |
| 71 | 1.4.1 | **走近金广** |  | 16d | 2023-01-27 | 2023-02-17 | 68 | 0d |  | 296h | 62,750 |
| 72 | 1.4.1.1 | 概要设计 | manual | 2d | 2023-01-27 | 2023-01-30 | 68 |  | 项目经理; UI设计师1; 系统架构师1 | 48h | 10,000 |
| 73 | 1.4.1.2 | 撰写概要设计说明书 | manual | 1d | 2023-01-31 | 2023-01-31 | 72 |  | 软件测试工程师1; UI设计师1; 配置管理员1 | 24h | 4,650 |
| 74 | 1.4.1.3 | 数据库设计 | manual | 2d | 2023-02-01 | 2023-02-02 | 73 |  | 数据库建模师1 | 16h | 3,500 |
| 75 | 1.4.1.4 | 撰写数据库说明书 | manual | 1d | 2023-02-03 | 2023-02-03 | 74 |  | 软件测试工程师1; 数据库建模师1 | 16h | 3,600 |
| 76 | 1.4.1.5 | 界面设计 | manual | 2d | 2023-02-06 | 2023-02-07 | 75 |  | UI设计师1; 系统分析员1 | 32h | 6,500 |
| 77 | 1.4.1.6 | 撰写界面设计说明书 | manual | 1d | 2023-02-08 | 2023-02-08 | 76 |  | UI设计师1; 配置管理员1; 系统分析员1 | 24h | 5,250 |
| 78 | 1.4.1.7 | 撰写集成测试计划 | manual | 2d | 2023-02-09 | 2023-02-10 | 77 |  | 软件评测师1 | 16h | 3,000 |
| 79 | 1.4.1.8 | 撰写集成测试用例 | manual | 2d | 2023-02-13 | 2023-02-14 | 78 |  | 软件评测师1 | 16h | 3,000 |
| 80 | 1.4.1.9 | 评审 | manual | 1d | 2023-02-15 | 2023-02-15 | 79 |  | 项目经理; 软件设计师1; 软件测试工程师1; 软件评测师1; 程序员1; 数据库建模师1; 系统分析员1; 系统架构师1; UI设计师1; 高级程序员1; 技术支持工程师1( 售后); 技术支持工程师2（售前）; 配置管理员1 | 104h | 23,250 |
| 81 | 1.4.1.10 | 虚任务 | manual | 2d | 2023-02-16 | 2023-02-17 | 80 |  |  |  |  |
| 82 | 1.4.2 | **园区介绍** |  | 14d | 2023-01-27 | 2023-02-15 | 68 | 0d |  | 296h | 62,750 |
| 83 | 1.4.2.1 | 概要设计 | manual | 2d | 2023-01-27 | 2023-01-30 | 68 |  | 项目经理; UI设计师2; 系统架构师2 | 48h | 10,000 |
| 84 | 1.4.2.2 | 撰写概要设计说明书 | manual | 1d | 2023-01-31 | 2023-01-31 | 83 |  | 软件测试工程师2; UI设计师2; 配置管理员2 | 24h | 4,650 |
| 85 | 1.4.2.3 | 数据库设计 | manual | 2d | 2023-02-01 | 2023-02-02 | 84 |  | 数据库建模师2 | 16h | 3,500 |
| 86 | 1.4.2.4 | 撰写数据库说明书 | manual | 1d | 2023-02-03 | 2023-02-03 | 85 |  | 软件测试工程师2; 数据库建模师2 | 16h | 3,600 |
| 87 | 1.4.2.5 | 界面设计 | manual | 2d | 2023-02-06 | 2023-02-07 | 86 |  | UI设计师2; 系统分析员2 | 32h | 6,500 |
| 88 | 1.4.2.6 | 撰写界面设计说明书 | manual | 1d | 2023-02-08 | 2023-02-08 | 87 |  | UI设计师2; 配置管理员2; 系统分析员2 | 24h | 5,250 |
| 89 | 1.4.2.7 | 撰写集成测试计划 | manual | 2d | 2023-02-09 | 2023-02-10 | 88 |  | 软件评测师2 | 16h | 3,000 |
| 90 | 1.4.2.8 | 撰写集成测试用例 | manual | 2d | 2023-02-13 | 2023-02-14 | 89 |  | 软件评测师2 | 16h | 3,000 |
| 91 | 1.4.2.9 | 评审 | manual | 1d | 2023-02-15 | 2023-02-15 | 90 |  | 项目经理; 软件设计师1; 软件测试工程师1; 软件评测师1; 程序员1; 数据库建模师1; 系统分析员1; 系统架构师1; UI设计师1; 高级程序员1; 技术支持工程师1( 售后); 技术支持工程师2（售前）; 配置管理员1 | 104h | 23,250 |

| ID | WBS | Task | Type | Duration | Start | Finish | Predecessors | Total slack | Resources | Work | Cost |
| --- | --- | --- | --- | --- | --- | --- | --- | --- | --- | --- | --- |
| 92 | 1.4.3 | **最新活动** |  | 14d | 2023-01-27 | 2023-02-15 | 68 | 0d |  | 296h | 62,750 |
| 93 | 1.4.3.1 | 概要设计 | manual | 2d | 2023-01-27 | 2023-01-30 | 68 |  | 项目经理; UI设计师3; 系统架构师1 | 48h | 10,000 |
| 94 | 1.4.3.2 | 撰写概要设计说明书 | manual | 1d | 2023-01-31 | 2023-01-31 | 93 |  | UI设计师3; 配置管理员3; 软件测试工程师3 | 24h | 4,650 |
| 95 | 1.4.3.3 | 数据库设计 | manual | 2d | 2023-02-01 | 2023-02-02 | 94 |  | 数据库建模师3 | 16h | 3,500 |
| 96 | 1.4.3.4 | 撰写数据库说明书 | manual | 1d | 2023-02-03 | 2023-02-03 | 95 |  | 软件测试工程师3; 数据库建模师3 | 16h | 3,600 |
| 97 | 1.4.3.5 | 界面设计 | manual | 2d | 2023-02-06 | 2023-02-07 | 96 |  | UI设计师3; 系统分析员1 | 32h | 6,500 |
| 98 | 1.4.3.6 | 撰写界面设计说明书 | manual | 1d | 2023-02-08 | 2023-02-08 | 97 |  | UI设计师3; 配置管理员3; 系统分析员1 | 24h | 5,250 |
| 99 | 1.4.3.7 | 撰写集成测试计划 | manual | 2d | 2023-02-09 | 2023-02-10 | 98 |  | 软件评测师3 | 16h | 3,000 |
| 100 | 1.4.3.8 | 撰写集成测试用例 | manual | 2d | 2023-02-13 | 2023-02-14 | 99 |  | 软件评测师3 | 16h | 3,000 |
| 101 | 1.4.3.9 | 评审 | manual | 1d | 2023-02-15 | 2023-02-15 | 100 |  | 项目经理; 软件设计师1; 软件测试工程师1; 软件评测师1; 程序员1; 数据库建模师1; 系统分析员1; 系统架构师1; UI设计师1; 高级程序员1; 技术支持工程师1( 售后); 技术支持工程师2（售前）; 配置管理员1 | 104h | 23,250 |
| 102 | 1.4.4 | **重要通知** |  | 14d? | 2023-01-27 | 2023-02-15 | 68 | 0d |  | 296h | 62,750 |
| 103 | 1.4.4.1 | 概要设计 | manual | 2d | 2023-01-27 | 2023-01-30 | 68 |  | 项目经理; UI设计师4; 系统架构师2 | 48h | 10,000 |
| 104 | 1.4.4.2 | 撰写概要设计说明书 | manual | 1d? | 2023-01-31 | 2023-01-31 | 103 |  | UI设计师4; 配置管理员4; 软件测试工程师4 | 24h | 4,650 |
| 105 | 1.4.4.3 | 数据库设计 | manual | 2d | 2023-02-01 | 2023-02-02 | 104 |  | 数据库建模师4 | 16h | 3,500 |
| 106 | 1.4.4.4 | 撰写数据库说明书 | manual | 1d | 2023-02-03 | 2023-02-03 | 105 |  | 软件测试工程师4; 数据库建模师4 | 16h | 3,600 |
| 107 | 1.4.4.5 | 界面设计 | manual | 2d | 2023-02-06 | 2023-02-07 | 106 |  | 系统分析员2; UI设计师4 | 32h | 6,500 |
| 108 | 1.4.4.6 | 撰写界面设计说明书 | manual | 1d | 2023-02-08 | 2023-02-08 | 107 |  | 系统分析员2; UI设计师4; 配置管理员4 | 24h | 5,250 |
| 109 | 1.4.4.7 | 撰写集成测试计划 | manual | 2d | 2023-02-09 | 2023-02-10 | 108 |  | 软件评测师4 | 16h | 3,000 |
| 110 | 1.4.4.8 | 撰写集成测试用例 | manual | 2d | 2023-02-13 | 2023-02-14 | 109 |  | 软件评测师4 | 16h | 3,000 |
| 111 | 1.4.4.9 | 评审 | manual | 1d | 2023-02-15 | 2023-02-15 | 110 |  | 项目经理; 软件设计师1; 软件测试工程师1; 软件评测师1; 程序员1; 数据库建模师1; 系统分析员1; 系统架构师1; UI设计师1; 高级程序员1; 技术支持工程师1( 售后); 技术支持工程师2（售前）; 配置管理员1 | 104h | 23,250 |
| 112 | 1.4.5 | **加入我们** |  | 15d? | 2023-01-27 | 2023-02-16 | 68 | 0d |  | 296h | 62,750 |
| 113 | 1.4.5.1 | 概要设计 | manual | 2d | 2023-01-27 | 2023-01-30 | 68 |  | 项目经理; UI设计师5; 系统架构师1 | 48h | 10,000 |
| 114 | 1.4.5.2 | 撰写概要设计说明书 | manual | 1d | 2023-01-31 | 2023-01-31 | 113 |  | UI设计师5; 配置管理员5; 软件测试工程师5 | 24h | 4,650 |
| 115 | 1.4.5.3 | 数据库设计 | manual | 2d | 2023-02-01 | 2023-02-02 | 114 |  | 数据库建模师5 | 16h | 3,500 |
| 116 | 1.4.5.4 | 撰写数据库说明书 | manual | 1d | 2023-02-03 | 2023-02-03 | 115 |  | 软件测试工程师5; 数据库建模师5 | 16h | 3,600 |
| 117 | 1.4.5.5 | 界面设计 | manual | 2d | 2023-02-06 | 2023-02-07 | 116 |  | 系统分析员2; UI设计师5 | 32h | 6,500 |
| 118 | 1.4.5.6 | 撰写界面设计说明书 | manual | 1d | 2023-02-08 | 2023-02-08 | 117 |  | 系统分析员2; UI设计师5; 配置管理员5 | 24h | 5,250 |
| 119 | 1.4.5.7 | 撰写集成测试计划 | manual | 2d | 2023-02-09 | 2023-02-10 | 118 |  | 软件评测师5 | 16h | 3,000 |
| 120 | 1.4.5.8 | 撰写集成测试用例 | manual | 2d | 2023-02-13 | 2023-02-14 | 119 |  | 软件评测师5 | 16h | 3,000 |
| 121 | 1.4.5.9 | 评审 | manual | 1d | 2023-02-15 | 2023-02-15 | 120 |  | 项目经理; 软件设计师1; 软件测试工程师1; 软件评测师1; 程序员1; 数据库建模师1; 系统分析员1; 系统架构师1; UI设计师1; 高级程序员1; 技术支持工程师1( 售后); 技术支持工程师2（售前）; 配置管理员1 | 104h | 23,250 |
| 122 | 1.4.5.10 | 虚任务 | manual | 1d? | 2023-02-16 | 2023-02-16 | 121 |  |  |  |  |

| ID | WBS | Task | Type | Duration | Start | Finish | Predecessors | Total slack | Free slack | Resources | Work | Cost |
| --- | --- | --- | --- | --- | --- | --- | --- | --- | --- | --- | --- | --- |
| 123 | 1.5 | **增量(三)管理资源** |  | 18d | 2023-02-16 | 2023-03-13 | 121 | -1d | 0d |  | 2072h | 439,250 |
| 124 | 1.5.1 | **小区管理** |  | 17d | 2023-02-16 | 2023-03-10 | 121 | 0d |  |  | 296h | 62,750 |
| 125 | 1.5.1.1 | 概要设计 | manual | 2d | 2023-02-16 | 2023-02-17 | 121 |  |  | 项目经理; UI设计师1; 系统架构师1 | 48h | 10,000 |
| 126 | 1.5.1.2 | 撰写概要设计说明书 | manual | 1d | 2023-02-20 | 2023-02-20 | 125 |  |  | 软件测试工程师1; UI设计师1; 配置管理员1 | 24h | 4,650 |
| 127 | 1.5.1.3 | 数据库设计 | manual | 2d | 2023-02-21 | 2023-02-22 | 126 |  |  | 数据库建模师1 | 16h | 3,500 |
| 128 | 1.5.1.4 | 撰写数据库说明书 | manual | 1d | 2023-02-23 | 2023-02-23 | 127 |  |  | 软件测试工程师1; 数据库建模师1 | 16h | 3,600 |
| 129 | 1.5.1.5 | 界面设计 | manual | 2d | 2023-02-24 | 2023-02-27 | 128 |  |  | UI设计师1; 系统分析员1 | 32h | 6,500 |
| 130 | 1.5.1.6 | 撰写界面设计说明书 | manual | 1d | 2023-02-28 | 2023-02-28 | 129 |  |  | UI设计师1; 配置管理员1; 系统分析员1 | 24h | 5,250 |
| 131 | 1.5.1.7 | 撰写集成测试计划 | manual | 2d | 2023-03-01 | 2023-03-02 | 130 |  |  | 软件评测师1 | 16h | 3,000 |
| 132 | 1.5.1.8 | 撰写集成测试用例 | manual | 2d | 2023-03-03 | 2023-03-06 | 131 |  |  | 软件评测师1 | 16h | 3,000 |
| 133 | 1.5.1.9 | 评审 | manual | 1d | 2023-03-07 | 2023-03-07 | 132 |  |  | 项目经理; 软件设计师1; 软件测试工程师1; 软件评测师1; 程序员1; 数据库建模师1; 系统分析员1; 系统架构师1; UI设计师1; 高级程序员1; 技术支持工程师1( 售后); 技术支持工程师2（售前）; 配置管理员1 | 104h | 23,250 |
| 134 | 1.5.1.10 | 虚任务 | manual | 3d | 2023-03-07 | 2023-03-10 | 133 |  |  |  |  |  |
| 135 | 1.5.2 | **楼栋管理** |  | 14d | 2023-02-16 | 2023-03-07 | 121 |  |  |  | 296h | 62,750 |
| 136 | 1.5.2.1 | 概要设计 | manual | 2d | 2023-02-16 | 2023-02-17 | 121 |  |  | 项目经理; UI设计师2; 系统架构师2 | 48h | 10,000 |
| 137 | 1.5.2.2 | 撰写概要设计说明书 | manual | 1d | 2023-02-20 | 2023-02-20 | 136 |  |  | 软件测试工程师2; UI设计师2; 配置管理员2 | 24h | 4,650 |
| 138 | 1.5.2.3 | 数据库设计 | manual | 2d | 2023-02-21 | 2023-02-22 | 137 |  |  | 数据库建模师2 | 16h | 3,500 |
| 139 | 1.5.2.4 | 撰写数据库说明书 | manual | 1d | 2023-02-23 | 2023-02-23 | 138 |  |  | 软件测试工程师2; 数据库建模师2 | 16h | 3,600 |
| 140 | 1.5.2.5 | 界面设计 | manual | 2d | 2023-02-24 | 2023-02-27 | 139 |  |  | UI设计师2; 系统分析员2 | 32h | 6,500 |
| 141 | 1.5.2.6 | 撰写界面设计说明书 | manual | 1d | 2023-02-28 | 2023-02-28 | 140 |  |  | UI设计师2; 配置管理员2; 系统分析员2 | 24h | 5,250 |
| 142 | 1.5.2.7 | 撰写集成测试计划 | manual | 2d | 2023-03-01 | 2023-03-02 | 141 |  |  | 软件评测师2 | 16h | 3,000 |
| 143 | 1.5.2.8 | 撰写集成测试用例 | manual | 2d | 2023-03-03 | 2023-03-06 | 142 |  |  | 软件评测师2 | 16h | 3,000 |
| 144 | 1.5.2.9 | 评审 | manual | 1d | 2023-03-07 | 2023-03-07 | 143 |  |  | 项目经理; 软件设计师1; 软件测试工程师1; 软件评测师1; 程序员1; 数据库建模师1; 系统分析员1; 系统架构师1; UI设计师1; 高级程序员1; 技术支持工程师1( 售后); 技术支持工程师2（售前）; 配置管理员1 | 104h | 23,250 |
| 145 | 1.5.3 | **单元管理** |  | 14d | 2023-02-16 | 2023-03-07 | 121 | 0d |  |  | 296h | 62,750 |
| 146 | 1.5.3.1 | 概要设计 | manual | 2d | 2023-02-16 | 2023-02-17 | 121 |  |  | 项目经理; UI设计师3; 系统架构师1 | 48h | 10,000 |
| 147 | 1.5.3.2 | 撰写概要设计说明书 | manual | 1d | 2023-02-20 | 2023-02-20 | 146 |  |  | UI设计师3; 配置管理员3; 软件测试工程师3 | 24h | 4,650 |
| 148 | 1.5.3.3 | 数据库设计 | manual | 2d | 2023-02-21 | 2023-02-22 | 147 |  |  | 数据库建模师3 | 16h | 3,500 |
| 149 | 1.5.3.4 | 撰写数据库说明书 | manual | 1d | 2023-02-23 | 2023-02-23 | 148 |  |  | 软件测试工程师3; 数据库建模师3 | 16h | 3,600 |
| 150 | 1.5.3.5 | 界面设计 | manual | 2d | 2023-02-24 | 2023-02-27 | 149 |  |  | UI设计师3; 系统分析员1 | 32h | 6,500 |
| 151 | 1.5.3.6 | 撰写界面设计说明书 | manual | 1d | 2023-02-28 | 2023-02-28 | 150 |  |  | UI设计师3; 配置管理员3; 系统分析员1 | 24h | 5,250 |
| 152 | 1.5.3.7 | 撰写集成测试计划 | manual | 2d | 2023-03-01 | 2023-03-02 | 151 |  |  | 软件评测师3 | 16h | 3,000 |
| 153 | 1.5.3.8 | 撰写集成测试用例 | manual | 2d | 2023-03-03 | 2023-03-06 | 152 |  |  | 软件评测师3 | 16h | 3,000 |
| 154 | 1.5.3.9 | 评审 | manual | 1d | 2023-03-07 | 2023-03-07 | 153 |  |  | 项目经理; 软件设计师1; 软件测试工程师1; 软件评测师1; 程序员1; 数据库建模师1; 系统分析员1; 系统架构师1; UI设计师1; 高级程序员1; 技术支持工程师1( 售后); 技术支持工程师2（售前）; 配置管理员1 | 104h | 23,250 |

| ID | WBS | Task | Type | Duration | Start | Finish | Predecessors | Total slack | Resources | Work | Cost |
| --- | --- | --- | --- | --- | --- | --- | --- | --- | --- | --- | --- |
| 155 | 1.5.4 | **电梯管理** |  | 14d | 2023-02-16 | 2023-03-07 | 121 | 0d |  | 296h | 62,750 |
| 156 | 1.5.4.1 | 概要设计 | manual | 2d | 2023-02-16 | 2023-02-17 | 121 |  | 项目经理; UI设计师4; 系统架构师2 | 48h | 10,000 |
| 157 | 1.5.4.2 | 撰写概要设计说明书 | manual | 1d | 2023-02-20 | 2023-02-20 | 156 |  | UI设计师4; 配置管理员4; 软件测试工程师4 | 24h | 4,650 |
| 158 | 1.5.4.3 | 数据库设计 | manual | 2d | 2023-02-21 | 2023-02-22 | 157 |  | 数据库建模师4 | 16h | 3,500 |
| 159 | 1.5.4.4 | 撰写数据库说明书 | manual | 1d | 2023-02-23 | 2023-02-23 | 158 |  | 软件测试工程师4; 数据库建模师4 | 16h | 3,600 |
| 160 | 1.5.4.5 | 界面设计 | manual | 2d | 2023-02-24 | 2023-02-27 | 159 |  | 系统分析员2; UI设计师4 | 32h | 6,500 |
| 161 | 1.5.4.6 | 撰写界面设计说明书 | manual | 1d | 2023-02-28 | 2023-02-28 | 160 |  | 系统分析员2; UI设计师4; 配置管理员4 | 24h | 5,250 |
| 162 | 1.5.4.7 | 撰写集成测试计划 | manual | 2d | 2023-03-01 | 2023-03-02 | 161 |  | 软件评测师4 | 16h | 3,000 |
| 163 | 1.5.4.8 | 撰写集成测试用例 | manual | 2d | 2023-03-03 | 2023-03-06 | 162 |  | 软件评测师4 | 16h | 3,000 |
| 164 | 1.5.4.9 | 评审 | manual | 1d | 2023-03-07 | 2023-03-07 | 163 |  | 项目经理; 软件设计师1; 软件测试工程师1; 软件评测师1; 程序员1; 数据库建模师1; 系统分析员1; 系统架构师1; UI设计师1; 高级程序员1; 技术支持工程师1( 售后); 技术支持工程师2（售前）; 配置管理员1 | 104h | 23,250 |
| 165 | 1.5.5 | **停车位管理** |  | 14d | 2023-02-16 | 2023-03-07 | 121 | 0d |  | 296h | 62,750 |
| 166 | 1.5.5.1 | 概要设计 | manual | 2d | 2023-02-16 | 2023-02-17 | 121 |  | 项目经理; UI设计师5; 系统架构师1 | 48h | 10,000 |
| 167 | 1.5.5.2 | 撰写概要设计说明书 | manual | 1d | 2023-02-20 | 2023-02-20 | 166 |  | UI设计师5; 配置管理员5; 软件测试工程师5 | 24h | 4,650 |
| 168 | 1.5.5.3 | 数据库设计 | manual | 2d | 2023-02-21 | 2023-02-22 | 167 |  | 数据库建模师5 | 16h | 3,500 |
| 169 | 1.5.5.4 | 撰写数据库说明书 | manual | 1d | 2023-02-23 | 2023-02-23 | 168 |  | 软件测试工程师5; 数据库建模师5 | 16h | 3,600 |
| 170 | 1.5.5.5 | 界面设计 | manual | 2d | 2023-02-24 | 2023-02-27 | 169 |  | 系统分析员2; UI设计师5 | 32h | 6,500 |
| 171 | 1.5.5.6 | 撰写界面设计说明书 | manual | 1d | 2023-02-28 | 2023-02-28 | 170 |  | 系统分析员2; UI设计师5; 配置管理员5 | 24h | 5,250 |
| 172 | 1.5.5.7 | 撰写集成测试计划 | manual | 2d | 2023-03-01 | 2023-03-02 | 171 |  | 软件评测师5 | 16h | 3,000 |
| 173 | 1.5.5.8 | 撰写集成测试用例 | manual | 2d | 2023-03-03 | 2023-03-06 | 172 |  | 软件评测师5 | 16h | 3,000 |
| 174 | 1.5.5.9 | 评审 | manual | 1d | 2023-03-07 | 2023-03-07 | 173 |  | 项目经理; 软件设计师1; 软件测试工程师1; 软件评测师1; 程序员1; 数据库建模师1; 系统分析员1; 系统架构师1; UI设计师1; 高级程序员1; 技术支持工程师1( 售后); 技术支持工程师2（售前）; 配置管理员1 | 104h | 23,250 |
| 175 | 1.5.6 | **广告位管理** |  | 14d | 2023-02-16 | 2023-03-07 | 121 | 0d |  | 296h | 62,750 |
| 176 | 1.5.6.1 | 概要设计 | manual | 2d | 2023-02-16 | 2023-02-17 | 121 |  | 项目经理; UI设计师1; 系统架构师1 | 48h | 10,000 |
| 177 | 1.5.6.2 | 撰写概要设计说明书 | manual | 1d | 2023-02-20 | 2023-02-20 | 176 |  | 软件测试工程师1; UI设计师1; 配置管理员1 | 24h | 4,650 |
| 178 | 1.5.6.3 | 数据库设计 | manual | 2d | 2023-02-21 | 2023-02-22 | 177 |  | 数据库建模师1 | 16h | 3,500 |
| 179 | 1.5.6.4 | 撰写数据库说明书 | manual | 1d | 2023-02-23 | 2023-02-23 | 178 |  | 软件测试工程师1; 数据库建模师1 | 16h | 3,600 |
| 180 | 1.5.6.5 | 界面设计 | manual | 2d | 2023-02-24 | 2023-02-27 | 179 |  | UI设计师1; 系统分析员1 | 32h | 6,500 |
| 181 | 1.5.6.6 | 撰写界面设计说明书 | manual | 1d | 2023-02-28 | 2023-02-28 | 180 |  | UI设计师1; 配置管理员1; 系统分析员1 | 24h | 5,250 |
| 182 | 1.5.6.7 | 撰写集成测试计划 | manual | 2d | 2023-03-01 | 2023-03-02 | 181 |  | 软件评测师1 | 16h | 3,000 |
| 183 | 1.5.6.8 | 撰写集成测试用例 | manual | 2d | 2023-03-03 | 2023-03-06 | 182 |  | 软件评测师1 | 16h | 3,000 |
| 184 | 1.5.6.9 | 评审 | manual | 1d | 2023-03-07 | 2023-03-07 | 183 |  | 项目经理; 软件设计师1; 软件测试工程师1; 软件评测师1; 程序员1; 数据库建模师1; 系统分析员1; 系统架构师1; UI设计师1; 高级程序员1; 技术支持工程师1( 售后); 技术支持工程师2（售前）; 配置管理员1 | 104h | 23,250 |

| ID | WBS | Task | Type | Duration | Start | Finish | Predecessors | Total slack | Free slack | Resources | Work | Cost |
| --- | --- | --- | --- | --- | --- | --- | --- | --- | --- | --- | --- | --- |
| 185 | 1.5.7 | **房间管理** |  | 18d | 2023-02-16 | 2023-03-13 | 121 | -4d | 0d |  | 296h | 62,750 |
| 186 | 1.5.7.1 | 概要设计 | manual | 2d | 2023-02-16 | 2023-02-17 | 121 |  |  | 项目经理; UI设计师2; 系统架构师2 | 48h | 10,000 |
| 187 | 1.5.7.2 | 撰写概要设计说明书 | manual | 1d | 2023-02-20 | 2023-02-20 | 186 |  |  | 软件测试工程师2; UI设计师2; 配置管理员2 | 24h | 4,650 |
| 188 | 1.5.7.3 | 数据库设计 | manual | 2d | 2023-02-21 | 2023-02-22 | 187 |  |  | 数据库建模师2 | 16h | 3,500 |
| 189 | 1.5.7.4 | 撰写数据库说明书 | manual | 1d | 2023-02-23 | 2023-02-23 | 188 |  |  | 软件测试工程师2; 数据库建模师2 | 16h | 3,600 |
| 190 | 1.5.7.5 | 界面设计 | manual | 2d | 2023-02-24 | 2023-02-27 | 189 |  |  | UI设计师2; 系统分析员2 | 32h | 6,500 |
| 191 | 1.5.7.6 | 撰写界面设计说明书 | manual | 1d | 2023-02-28 | 2023-02-28 | 190 |  |  | UI设计师2; 配置管理员2; 系统分析员2 | 24h | 5,250 |
| 192 | 1.5.7.7 | 撰写集成测试计划 | manual | 2d | 2023-03-01 | 2023-03-02 | 191 |  |  | 软件评测师2 | 16h | 3,000 |
| 193 | 1.5.7.8 | 撰写集成测试用例 | manual | 2d | 2023-03-03 | 2023-03-06 | 192 |  |  | 软件评测师2 | 16h | 3,000 |
| 194 | 1.5.7.9 | 评审 |  | 1d | 2023-03-07 | 2023-03-07 | 193 | -4d | 0d | 项目经理; 软件设计师1; 软件测试工程师1; 软件评测师1; 程序员1; 数据库建模师1; 系统分析员1; 系统架构师1; UI设计师1; 高级程序员1; 技术支持工程师1( 售后); 技术支持工程师2（售前）; 配置管理员1 | 104h | 23,250 |
| 195 | 1.5.7.10 | 虚任务 |  | 4d | 2023-03-08 | 2023-03-13 | 194 | -4d | 0d |  |  |  |
| 196 | 1.6 | **增量(四)客服管理** |  | 24d | 2023-03-08 | 2023-04-11 | 195 | 0d |  |  | 1184h | 251,000 |
| 197 | 1.6.1 | **管理业主诉求** |  | 14d | 2023-03-14 | 2023-03-31 | 195 |  |  |  | 296h | 62,750 |
| 198 | 1.6.1.1 | 概要设计 |  | 2d | 2023-03-14 | 2023-03-15 | 195 | 310d | 0d | 项目经理; UI设计师3; 系统架构师1 | 48h | 10,000 |
| 199 | 1.6.1.2 | 撰写概要设计说明书 |  | 1d | 2023-03-16 | 2023-03-16 | 198 | 310d | 0d | UI设计师3; 配置管理员3; 软件测试工程师3 | 24h | 4,650 |
| 200 | 1.6.1.3 | 数据库设计 |  | 2d | 2023-03-17 | 2023-03-20 | 199 | 310d | 0d | 数据库建模师3 | 16h | 3,500 |
| 201 | 1.6.1.4 | 撰写数据库说明书 |  | 1d | 2023-03-21 | 2023-03-21 | 200 | 310d | 0d | 软件测试工程师3; 数据库建模师3 | 16h | 3,600 |
| 202 | 1.6.1.5 | 界面设计 |  | 2d | 2023-03-22 | 2023-03-23 | 201 | 310d | 0d | UI设计师3; 系统分析员1 | 32h | 6,500 |
| 203 | 1.6.1.6 | 撰写界面设计说明书 |  | 1d | 2023-03-24 | 2023-03-24 | 202 | 310d | 0d | UI设计师3; 配置管理员3; 系统分析员1 | 24h | 5,250 |
| 204 | 1.6.1.7 | 撰写集成测试计划 |  | 2d | 2023-03-27 | 2023-03-28 | 203 | 310d | 0d | 软件评测师3 | 16h | 3,000 |
| 205 | 1.6.1.8 | 撰写集成测试用例 |  | 2d | 2023-03-29 | 2023-03-30 | 204 | 310d | 0d | 软件评测师3 | 16h | 3,000 |
| 206 | 1.6.1.9 | 评审 |  | 1d | 2023-03-31 | 2023-03-31 | 205 | 310d | 0d | 项目经理; 软件设计师1; 软件测试工程师1; 软件评测师1; 程序员1; 数据库建模师1; 系统分析员1; 系统架构师1; UI设计师1; 高级程序员1; 技术支持工程师1( 售后); 技术支持工程师2（售前）; 配置管理员1 | 104h | 23,250 |
| 207 | 1.6.1.10 | 虚任务 |  | 2d | 2023-04-03 | 2023-04-04 | 206 | 310d |  |  |  |  |
| 208 | 1.6.2 | **重要通知维护** |  | 14d | 2023-03-14 | 2023-03-31 | 195 | 312d |  |  | 296h | 62,750 |
| 209 | 1.6.2.1 | 概要设计 |  | 2d | 2023-03-14 | 2023-03-15 | 195 | 312d | 0d | 项目经理; UI设计师4; 系统架构师2 | 48h | 10,000 |
| 210 | 1.6.2.2 | 撰写概要设计说明书 |  | 1d | 2023-03-16 | 2023-03-16 | 209 | 312d | 0d | UI设计师4; 配置管理员4; 软件测试工程师4 | 24h | 4,650 |
| 211 | 1.6.2.3 | 数据库设计 |  | 2d | 2023-03-17 | 2023-03-20 | 210 | 312d | 0d | 数据库建模师4 | 16h | 3,500 |
| 212 | 1.6.2.4 | 撰写数据库说明书 |  | 1d | 2023-03-21 | 2023-03-21 | 211 | 312d | 0d | 软件测试工程师4; 数据库建模师4 | 16h | 3,600 |
| 213 | 1.6.2.5 | 界面设计 |  | 2d | 2023-03-22 | 2023-03-23 | 212 | 312d | 0d | 系统分析员2; UI设计师4 | 32h | 6,500 |
| 214 | 1.6.2.6 | 撰写界面设计说明书 |  | 1d | 2023-03-24 | 2023-03-24 | 213 | 312d | 0d | 系统分析员2; UI设计师4; 配置管理员4 | 24h | 5,250 |
| 215 | 1.6.2.7 | 撰写集成测试计划 |  | 2d | 2023-03-27 | 2023-03-28 | 214 | 312d | 0d | 软件评测师4 | 16h | 3,000 |
| 216 | 1.6.2.8 | 撰写集成测试用例 |  | 2d | 2023-03-29 | 2023-03-30 | 215 | 312d | 0d | 软件评测师4 | 16h | 3,000 |
| 217 | 1.6.2.9 | 评审 |  | 1d | 2023-03-31 | 2023-03-31 | 216 | 312d |  | 项目经理; 软件设计师1; 软件测试工程师1; 软件评测师1; 程序员1; 数据库建模师1; 系统分析员1; 系统架构师1; UI设计师1; 高级程序员1; 技术支持工程师1( 售后); 技术支持工程师2（售前）; 配置管理员1 | 104h | 23,250 |

| ID | WBS | Task | Type | Duration | Start | Finish | Predecessors | Total slack | Free slack | Resources | Work | Cost |
| --- | --- | --- | --- | --- | --- | --- | --- | --- | --- | --- | --- | --- |
| 218 | 1.6.3 | **收费表下载** |  | 14d | 2023-03-08 | 2023-03-27 | 194 |  |  |  | 296h | 62,750 |
| 219 | 1.6.3.1 | 概要设计 | manual | 2d | 2023-03-08 | 2023-03-09 | 194 |  |  | 项目经理; UI设计师5; 系统架构师1 | 48h | 10,000 |
| 220 | 1.6.3.2 | 撰写概要设计说明书 | manual | 1d | 2023-03-10 | 2023-03-10 | 219 |  |  | UI设计师5; 配置管理员5; 软件测试工程师5 | 24h | 4,650 |
| 221 | 1.6.3.3 | 数据库设计 | manual | 2d | 2023-03-13 | 2023-03-14 | 220 |  |  | 数据库建模师5 | 16h | 3,500 |
| 222 | 1.6.3.4 | 撰写数据库说明书 | manual | 1d | 2023-03-15 | 2023-03-15 | 221 |  |  | 软件测试工程师5; 数据库建模师5 | 16h | 3,600 |
| 223 | 1.6.3.5 | 界面设计 | manual | 2d | 2023-03-16 | 2023-03-17 | 222 |  |  | 系统分析员2; UI设计师5 | 32h | 6,500 |
| 224 | 1.6.3.6 | 撰写界面设计说明书 | manual | 1d | 2023-03-20 | 2023-03-20 | 223 |  |  | 系统分析员2; UI设计师5; 配置管理员5 | 24h | 5,250 |
| 225 | 1.6.3.7 | 撰写集成测试计划 | manual | 2d | 2023-03-21 | 2023-03-22 | 224 |  |  | 软件评测师5 | 16h | 3,000 |
| 226 | 1.6.3.8 | 撰写集成测试用例 | manual | 2d | 2023-03-23 | 2023-03-24 | 225 |  |  | 软件评测师5 | 16h | 3,000 |
| 227 | 1.6.3.9 | 评审 | manual | 1d | 2023-03-27 | 2023-03-27 | 226 |  |  | 项目经理; 软件设计师1; 软件测试工程师1; 软件评测师1; 程序员1; 数据库建模师1; 系统分析员1; 系统架构师1; UI设计师1; 高级程序员1; 技术支持工程师1( 售后); 技术支持工程师2（售前）; 配置管理员1 | 104h | 23,250 |
| 228 | 1.6.4 | **维修表下载** |  | 20d | 2023-03-14 | 2023-04-11 | 195 | 0d |  |  | 296h | 62,750 |
| 229 | 1.6.4.1 | 概要设计 | manual | 2d | 2023-03-14 | 2023-03-15 | 195 |  |  | 项目经理; UI设计师1; 系统架构师1 | 48h | 10,000 |
| 230 | 1.6.4.2 | 撰写概要设计说明书 |  | 1d | 2023-03-16 | 2023-03-16 | 229 | 0d |  | 软件测试工程师1; UI设计师1; 配置管理员1 | 24h | 4,650 |
| 231 | 1.6.4.3 | 数据库设计 |  | 2d | 2023-03-17 | 2023-03-20 | 230 | 0d |  | 数据库建模师1 | 16h | 3,500 |
| 232 | 1.6.4.4 | 撰写数据库说明书 |  | 1d | 2023-03-21 | 2023-03-21 | 231 | 0d |  | 软件测试工程师1; 数据库建模师1 | 16h | 3,600 |
| 233 | 1.6.4.5 | 界面设计 |  | 2d | 2023-03-22 | 2023-03-23 | 232 | 0d |  | UI设计师1; 系统分析员1 | 32h | 6,500 |
| 234 | 1.6.4.6 | 撰写界面设计说明书 |  | 1d | 2023-03-24 | 2023-03-24 | 233 | 0d |  | UI设计师1; 配置管理员1; 系统分析员1 | 24h | 5,250 |
| 235 | 1.6.4.7 | 撰写集成测试计划 |  | 2d | 2023-03-27 | 2023-03-28 | 234 | 0d |  | 软件评测师1 | 16h | 3,000 |
| 236 | 1.6.4.8 | 撰写集成测试用例 |  | 2d | 2023-03-29 | 2023-03-30 | 235 | 0d |  | 软件评测师1 | 16h | 3,000 |
| 237 | 1.6.4.9 | 评审 |  | 1d | 2023-03-31 | 2023-03-31 | 236 | 0d |  | 项目经理; 软件设计师1; 软件测试工程师1; 软件评测师1; 程序员1; 数据库建模师1; 系统分析员1; 系统架构师1; UI设计师1; 高级程序员1; 技术支持工程师1( 售后); 技术支持工程师2（售前）; 配置管理员1 | 104h | 23,250 |
| 238 | 1.6.4.10 | 虚任务 | manual | 6d | 2023-04-03 | 2023-04-11 | 237 |  |  |  |  |  |
| 239 | 1.7 | **增量(五)维护园区** |  | 20d | 2023-04-12 | 2023-05-09 | 238 | 0d |  |  | 1480h | 313,750 |
| 240 | 1.7.1 | **日常维修** |  | 14d | 2023-04-12 | 2023-05-01 | 238 | 292d |  |  | 296h | 62,750 |
| 241 | 1.7.1.1 | 概要设计 |  | 2d | 2023-04-12 | 2023-04-13 | 238 | 292d | 0d | 项目经理; UI设计师2; 系统架构师2 | 48h | 10,000 |
| 242 | 1.7.1.2 | 撰写概要设计说明书 |  | 1d | 2023-04-14 | 2023-04-14 | 241 | 292d | 0d | 软件测试工程师2; UI设计师2; 配置管理员2 | 24h | 4,650 |
| 243 | 1.7.1.3 | 数据库设计 |  | 2d | 2023-04-17 | 2023-04-18 | 242 | 292d | 0d | 数据库建模师2 | 16h | 3,500 |
| 244 | 1.7.1.4 | 撰写数据库说明书 |  | 1d | 2023-04-19 | 2023-04-19 | 243 | 292d | 0d | 软件测试工程师2; 数据库建模师2 | 16h | 3,600 |
| 245 | 1.7.1.5 | 界面设计 |  | 2d | 2023-04-20 | 2023-04-21 | 244 | 292d | 0d | UI设计师2; 系统分析员2 | 32h | 6,500 |
| 246 | 1.7.1.6 | 撰写界面设计说明书 |  | 1d | 2023-04-24 | 2023-04-24 | 245 | 292d | 0d | UI设计师2; 配置管理员2; 系统分析员2 | 24h | 5,250 |
| 247 | 1.7.1.7 | 撰写集成测试计划 |  | 2d | 2023-04-25 | 2023-04-26 | 246 | 292d | 0d | 软件评测师2 | 16h | 3,000 |
| 248 | 1.7.1.8 | 撰写集成测试用例 |  | 2d | 2023-04-27 | 2023-04-28 | 247 | 292d | 0d | 软件评测师2 | 16h | 3,000 |
| 249 | 1.7.1.9 | 评审 |  | 1d | 2023-05-01 | 2023-05-01 | 248 | 292d |  | 项目经理; 软件设计师1; 软件测试工程师1; 软件评测师1; 程序员1; 数据库建模师1; 系统分析员1; 系统架构师1; UI设计师1; 高级程序员1; 技术支持工程师1( 售后); 技术支持工程师2（售前）; 配置管理员1 | 104h | 23,250 |

| ID | WBS | Task | Duration | Start | Finish | Predecessors | Total slack | Free slack | Resources | Work | Cost |
| --- | --- | --- | --- | --- | --- | --- | --- | --- | --- | --- | --- |
| 250 | 1.7.2 | **日常巡检** | 14d | 2023-04-12 | 2023-05-01 | 238 | 292d |  |  | 296h | 62,750 |
| 251 | 1.7.2.1 | 概要设计 | 2d | 2023-04-12 | 2023-04-13 | 237 | 292d | 0d | 项目经理; UI设计师3; 系统架构师1 | 48h | 10,000 |
| 252 | 1.7.2.2 | 撰写概要设计说明书 | 1d | 2023-04-14 | 2023-04-14 | 251 | 292d | 0d | UI设计师3; 配置管理员3; 软件测试工程师3 | 24h | 4,650 |
| 253 | 1.7.2.3 | 数据库设计 | 2d | 2023-04-17 | 2023-04-18 | 252 | 292d | 0d | 数据库建模师3 | 16h | 3,500 |
| 254 | 1.7.2.4 | 撰写数据库说明书 | 1d | 2023-04-19 | 2023-04-19 | 253 | 292d | 0d | 软件测试工程师3; 数据库建模师3 | 16h | 3,600 |
| 255 | 1.7.2.5 | 界面设计 | 2d | 2023-04-20 | 2023-04-21 | 254 | 292d | 0d | UI设计师3; 系统分析员1 | 32h | 6,500 |
| 256 | 1.7.2.6 | 撰写界面设计说明书 | 1d | 2023-04-24 | 2023-04-24 | 255 | 292d | 0d | 系统分析员1; UI设计师3; 配置管理员3 | 24h | 5,250 |
| 257 | 1.7.2.7 | 撰写集成测试计划 | 2d | 2023-04-25 | 2023-04-26 | 256 | 292d | 0d | 软件评测师3 | 16h | 3,000 |
| 258 | 1.7.2.8 | 撰写集成测试用例 | 2d | 2023-04-27 | 2023-04-28 | 257 | 292d | 0d | 软件评测师3 | 16h | 3,000 |
| 259 | 1.7.2.9 | 评审 | 1d | 2023-05-01 | 2023-05-01 | 258 | 292d |  | 项目经理; 软件设计师1; 软件测试工程师1; 软件评测师1; 程序员1; 数据库建模师1; 系统分析员1; 系统架构师1; UI设计师1; 高级程序员1; 技术支持工程师1( 售后); 技术支持工程师2（售前）; 配置管理员1 | 104h | 23,250 |
| 260 | 1.7.3 | **管理维保** | 14d | 2023-04-12 | 2023-05-01 | 238 | 292d |  |  | 296h | 62,750 |
| 261 | 1.7.3.1 | 概要设计 | 2d | 2023-04-12 | 2023-04-13 | 237 | 292d | 0d | 项目经理; UI设计师4; 系统架构师2 | 48h | 10,000 |
| 262 | 1.7.3.2 | 撰写概要设计说明书 | 1d | 2023-04-14 | 2023-04-14 | 261 | 292d | 0d | UI设计师4; 配置管理员4; 软件测试工程师4 | 24h | 4,650 |
| 263 | 1.7.3.3 | 数据库设计 | 2d | 2023-04-17 | 2023-04-18 | 262 | 292d | 0d | 数据库建模师4 | 16h | 3,500 |
| 264 | 1.7.3.4 | 撰写数据库说明书 | 1d | 2023-04-19 | 2023-04-19 | 263 | 292d | 0d | 软件测试工程师4; 数据库建模师4 | 16h | 3,600 |
| 265 | 1.7.3.5 | 界面设计 | 2d | 2023-04-20 | 2023-04-21 | 264 | 292d | 0d | 系统分析员2; UI设计师4 | 32h | 6,500 |
| 266 | 1.7.3.6 | 撰写界面设计说明书 | 1d | 2023-04-24 | 2023-04-24 | 265 | 292d | 0d | UI设计师4; 系统分析员2; 配置管理员4 | 24h | 5,250 |
| 267 | 1.7.3.7 | 撰写集成测试计划 | 2d | 2023-04-25 | 2023-04-26 | 266 | 292d | 0d | 软件评测师4 | 16h | 3,000 |
| 268 | 1.7.3.8 | 撰写集成测试用例 | 2d | 2023-04-27 | 2023-04-28 | 267 | 292d | 0d | 软件评测师4 | 16h | 3,000 |
| 269 | 1.7.3.9 | 评审 | 1d | 2023-05-01 | 2023-05-01 | 268 | 292d |  | 项目经理; 软件设计师1; 软件测试工程师1; 软件评测师1; 程序员1; 数据库建模师1; 系统分析员1; 系统架构师1; UI设计师1; 高级程序员1; 技术支持工程师1( 售后); 技术支持工程师2（售前）; 配置管理员1 | 104h | 23,250 |
| 270 | 1.7.4 | **管理园区工程** | 14d | 2023-04-12 | 2023-05-01 | 238 | 292d |  |  | 296h | 62,750 |
| 271 | 1.7.4.1 | 概要设计 | 2d | 2023-04-12 | 2023-04-13 | 237 | 292d | 0d | 项目经理; UI设计师5; 系统架构师1 | 48h | 10,000 |
| 272 | 1.7.4.2 | 撰写概要设计说明书 | 1d | 2023-04-14 | 2023-04-14 | 271 | 292d | 0d | UI设计师5; 配置管理员5; 软件测试工程师5 | 24h | 4,650 |
| 273 | 1.7.4.3 | 数据库设计 | 2d | 2023-04-17 | 2023-04-18 | 272 | 292d | 0d | 数据库建模师5 | 16h | 3,500 |
| 274 | 1.7.4.4 | 撰写数据库说明书 | 1d | 2023-04-19 | 2023-04-19 | 273 | 292d | 0d | 软件测试工程师5; 数据库建模师5 | 16h | 3,600 |
| 275 | 1.7.4.5 | 界面设计 | 2d | 2023-04-20 | 2023-04-21 | 274 | 292d | 0d | 系统分析员2; UI设计师5 | 32h | 6,500 |
| 276 | 1.7.4.6 | 撰写界面设计说明书 | 1d | 2023-04-24 | 2023-04-24 | 275 | 292d | 0d | UI设计师5; 系统分析员2; 配置管理员5 | 24h | 5,250 |
| 277 | 1.7.4.7 | 撰写集成测试计划 | 2d | 2023-04-25 | 2023-04-26 | 276 | 292d | 0d | 软件评测师5 | 16h | 3,000 |
| 278 | 1.7.4.8 | 撰写集成测试用例 | 2d | 2023-04-27 | 2023-04-28 | 277 | 292d | 0d | 软件评测师5 | 16h | 3,000 |
| 279 | 1.7.4.9 | 评审 | 1d | 2023-05-01 | 2023-05-01 | 278 | 292d |  | 项目经理; 软件设计师1; 软件测试工程师1; 软件评测师1; 程序员1; 数据库建模师1; 系统分析员1; 系统架构师1; UI设计师1; 高级程序员1; 技术支持工程师1( 售后); 技术支持工程师2（售前）; 配置管理员1 | 104h | 23,250 |

| ID | WBS | Task | Duration | Start | Finish | Predecessors | Total slack | Free slack | Resources | Work | Cost |
| --- | --- | --- | --- | --- | --- | --- | --- | --- | --- | --- | --- |
| 280 | 1.7.5 | **应急支援** | 20d | 2023-04-12 | 2023-05-09 | 238 | 0d |  |  | 296h | 62,750 |
| 281 | 1.7.5.1 | 概要设计 | 2d | 2023-04-12 | 2023-04-13 | 237 | 0d |  | 项目经理; UI设计师1; 系统架构师1 | 48h | 10,000 |
| 282 | 1.7.5.2 | 撰写概要设计说明书 | 1d | 2023-04-14 | 2023-04-14 | 281 | 0d |  | 软件测试工程师1; UI设计师1; 配置管理员1 | 24h | 4,650 |
| 283 | 1.7.5.3 | 数据库设计 | 2d | 2023-04-17 | 2023-04-18 | 282 | 0d |  | 数据库建模师1 | 16h | 3,500 |
| 284 | 1.7.5.4 | 撰写数据库说明书 | 1d | 2023-04-19 | 2023-04-19 | 283 | 0d |  | 软件测试工程师1; 数据库建模师1 | 16h | 3,600 |
| 285 | 1.7.5.5 | 界面设计 | 2d | 2023-04-20 | 2023-04-21 | 284 | 0d |  | UI设计师1; 系统分析员1 | 32h | 6,500 |
| 286 | 1.7.5.6 | 撰写界面设计说明书 | 1d | 2023-04-24 | 2023-04-24 | 285 | 0d |  | UI设计师1; 配置管理员1; 系统分析员1 | 24h | 5,250 |
| 287 | 1.7.5.7 | 撰写集成测试计划 | 2d | 2023-04-25 | 2023-04-26 | 286 | 0d |  | 软件评测师1 | 16h | 3,000 |
| 288 | 1.7.5.8 | 撰写集成测试用例 | 2d | 2023-04-27 | 2023-04-28 | 287 | 0d |  | 软件评测师1 | 16h | 3,000 |
| 289 | 1.7.5.9 | 评审 | 1d | 2023-05-01 | 2023-05-01 | 288 | 0d |  | 项目经理; 软件设计师1; 软件测试工程师1; 软件评测师1; 程序员1; 数据库建模师1; 系统分析员1; 系统架构师1; UI设计师1; 高级程序员1; 技术支持工程师1( 售后); 技术支持工程师2（售前）; 配置管理员1 | 104h | 23,250 |
| 290 | 1.7.5.10 | 虚任务 | 6d | 2023-05-02 | 2023-05-09 | 289 | 0d |  |  |  |  |
| 291 | 1.8 | **增量(六)园区秩序** | 20d | 2023-05-10 | 2023-06-06 | 290 | 0d |  |  | 888h | 188,250 |
| 292 | 1.8.1 | **管理车辆** | 14d | 2023-05-10 | 2023-05-29 | 290 | 272d |  |  | 296h | 62,750 |
| 293 | 1.8.1.1 | 概要设计 | 2d | 2023-05-10 | 2023-05-11 | 290 | 272d | 0d | 项目经理; UI设计师2; 系统架构师2 | 48h | 10,000 |
| 294 | 1.8.1.2 | 撰写概要设计说明书 | 1d | 2023-05-12 | 2023-05-12 | 293 | 272d | 0d | 软件测试工程师2; UI设计师2; 配置管理员2 | 24h | 4,650 |
| 295 | 1.8.1.3 | 数据库设计 | 2d | 2023-05-15 | 2023-05-16 | 294 | 272d | 0d | 数据库建模师2 | 16h | 3,500 |
| 296 | 1.8.1.4 | 撰写数据库说明书 | 1d | 2023-05-17 | 2023-05-17 | 295 | 272d | 0d | 软件测试工程师2; 数据库建模师2 | 16h | 3,600 |
| 297 | 1.8.1.5 | 界面设计 | 2d | 2023-05-18 | 2023-05-19 | 296 | 272d | 0d | UI设计师2; 系统分析员2 | 32h | 6,500 |
| 298 | 1.8.1.6 | 撰写界面设计说明书 | 1d | 2023-05-22 | 2023-05-22 | 297 | 272d | 0d | UI设计师2; 配置管理员2; 系统分析员2 | 24h | 5,250 |
| 299 | 1.8.1.7 | 撰写集成测试计划 | 2d | 2023-05-23 | 2023-05-24 | 298 | 272d | 0d | 软件评测师2 | 16h | 3,000 |
| 300 | 1.8.1.8 | 撰写集成测试用例 | 2d | 2023-05-25 | 2023-05-26 | 299 | 272d | 0d | 软件评测师2 | 16h | 3,000 |
| 301 | 1.8.1.9 | 评审 | 1d | 2023-05-29 | 2023-05-29 | 300 | 272d |  | 项目经理; 软件设计师1; 软件测试工程师1; 软件评测师1; 程序员1; 数据库建模师1; 系统分析员1; 系统架构师1; UI设计师1; 高级程序员1; 技术支持工程师1( 售后); 技术支持工程师2（售前）; 配置管理员1 | 104h | 23,250 |
| 302 | 1.8.2 | **管理消防** | 14d | 2023-05-10 | 2023-05-29 | 290 | 272d |  |  | 296h | 62,750 |
| 303 | 1.8.2.1 | 概要设计 | 2d | 2023-05-10 | 2023-05-11 | 289 | 272d | 0d | 项目经理; UI设计师3; 系统架构师1 | 48h | 10,000 |
| 304 | 1.8.2.2 | 撰写概要设计说明书 | 1d | 2023-05-12 | 2023-05-12 | 303 | 272d | 0d | UI设计师3; 配置管理员3; 软件测试工程师3 | 24h | 4,650 |
| 305 | 1.8.2.3 | 数据库设计 | 2d | 2023-05-15 | 2023-05-16 | 304 | 272d | 0d | 数据库建模师3 | 16h | 3,500 |
| 306 | 1.8.2.4 | 撰写数据库说明书 | 1d | 2023-05-17 | 2023-05-17 | 305 | 272d | 0d | 软件测试工程师3; 数据库建模师3 | 16h | 3,600 |
| 307 | 1.8.2.5 | 界面设计 | 2d | 2023-05-18 | 2023-05-19 | 306 | 272d | 0d | UI设计师3; 系统分析员1 | 32h | 6,500 |
| 308 | 1.8.2.6 | 撰写界面设计说明书 | 1d | 2023-05-22 | 2023-05-22 | 307 | 272d | 0d | 系统分析员1; UI设计师3; 配置管理员3 | 24h | 5,250 |
| 309 | 1.8.2.7 | 撰写集成测试计划 | 2d | 2023-05-23 | 2023-05-24 | 308 | 272d | 0d | 软件评测师3 | 16h | 3,000 |
| 310 | 1.8.2.8 | 撰写集成测试用例 | 2d | 2023-05-25 | 2023-05-26 | 309 | 272d | 0d | 软件评测师3 | 16h | 3,000 |
| 311 | 1.8.2.9 | 评审 | 1d | 2023-05-29 | 2023-05-29 | 310 | 272d |  | 项目经理; 软件设计师1; 软件测试工程师1; 软件评测师1; 程序员1; 数据库建模师1; 系统分析员1; 系统架构师1; UI设计师1; 高级程序员1; 技术支持工程师1( 售后); 技术支持工程师2（售前）; 配置管理员1 | 104h | 23,250 |

| ID | WBS | Task | Duration | Start | Finish | Predecessors | Total slack | Free slack | Resources | Work | Cost |
| --- | --- | --- | --- | --- | --- | --- | --- | --- | --- | --- | --- |
| 312 | 1.8.3 | **监控管理** | 20d | 2023-05-10 | 2023-06-06 | 290 | 0d |  |  | 296h | 62,750 |
| 313 | 1.8.3.1 | 概要设计 | 2d | 2023-05-10 | 2023-05-11 | 289 | 0d |  | 项目经理; UI设计师4; 系统架构师2 | 48h | 10,000 |
| 314 | 1.8.3.2 | 撰写概要设计说明书 | 1d | 2023-05-12 | 2023-05-12 | 313 | 0d |  | UI设计师4; 配置管理员4; 软件测试工程师4 | 24h | 4,650 |
| 315 | 1.8.3.3 | 数据库设计 | 2d | 2023-05-15 | 2023-05-16 | 314 | 0d |  | 数据库建模师4 | 16h | 3,500 |
| 316 | 1.8.3.4 | 撰写数据库说明书 | 1d | 2023-05-17 | 2023-05-17 | 315 | 0d |  | 软件测试工程师4; 数据库建模师4 | 16h | 3,600 |
| 317 | 1.8.3.5 | 界面设计 | 2d | 2023-05-18 | 2023-05-19 | 316 | 0d |  | 系统分析员2; UI设计师4 | 32h | 6,500 |
| 318 | 1.8.3.6 | 撰写界面设计说明书 | 1d | 2023-05-22 | 2023-05-22 | 317 | 0d |  | UI设计师4; 系统分析员2; 配置管理员4 | 24h | 5,250 |
| 319 | 1.8.3.7 | 撰写集成测试计划 | 2d | 2023-05-23 | 2023-05-24 | 318 | 0d |  | 软件评测师4 | 16h | 3,000 |
| 320 | 1.8.3.8 | 撰写集成测试用例 | 2d | 2023-05-25 | 2023-05-26 | 319 | 0d |  | 软件评测师4 | 16h | 3,000 |
| 321 | 1.8.3.9 | 评审 | 1d | 2023-05-29 | 2023-05-29 | 320 | 0d |  | 项目经理; 软件设计师1; 软件测试工程师1; 软件评测师1; 程序员1; 数据库建模师1; 系统分析员1; 系统架构师1; UI设计师1; 高级程序员1; 技术支持工程师1( 售后); 技术支持工程师2（售前）; 配置管理员1 | 104h | 23,250 |
| 322 | 1.8.3.10 | 虚任务 | 6d | 2023-05-30 | 2023-06-06 | 321 | 0d |  |  |  |  |
| 323 | 1.9 | **增量(七)园区环境** | 20d | 2023-06-07 | 2023-07-06 | 322 | 0d |  |  | 1184h | 251,000 |
| 324 | 1.9.1 | **检查园区环境** | 14d | 2023-06-07 | 2023-06-28 | 322 | 252d |  |  | 296h | 62,750 |
| 325 | 1.9.1.1 | 概要设计 | 2d | 2023-06-07 | 2023-06-08 | 322 | 252d | 0d | 项目经理; UI设计师5; 系统架构师1 | 48h | 10,000 |
| 326 | 1.9.1.2 | 撰写概要设计说明书 | 1d | 2023-06-09 | 2023-06-09 | 325 | 252d | 0d | UI设计师5; 配置管理员5; 软件测试工程师5 | 24h | 4,650 |
| 327 | 1.9.1.3 | 数据库设计 | 2d | 2023-06-12 | 2023-06-13 | 326 | 252d | 0d | 数据库建模师5 | 16h | 3,500 |
| 328 | 1.9.1.4 | 撰写数据库说明书 | 1d | 2023-06-14 | 2023-06-14 | 327 | 252d | 0d | 软件测试工程师5; 数据库建模师5 | 16h | 3,600 |
| 329 | 1.9.1.5 | 界面设计 | 2d | 2023-06-15 | 2023-06-16 | 328 | 252d | 0d | 系统分析员2; UI设计师5 | 32h | 6,500 |
| 330 | 1.9.1.6 | 撰写界面设计说明书 | 1d | 2023-06-19 | 2023-06-19 | 329 | 252d | 0d | UI设计师5; 系统分析员2; 配置管理员5 | 24h | 5,250 |
| 331 | 1.9.1.7 | 撰写集成测试计划 | 2d | 2023-06-20 | 2023-06-21 | 330 | 252d | 0d | 软件评测师5 | 16h | 3,000 |
| 332 | 1.9.1.8 | 撰写集成测试用例 | 2d | 2023-06-26 | 2023-06-27 | 331 | 252d | 0d | 软件评测师5 | 16h | 3,000 |
| 333 | 1.9.1.9 | 评审 | 1d | 2023-06-28 | 2023-06-28 | 332 | 252d |  | 项目经理; 软件设计师1; 软件测试工程师1; 软件评测师1; 程序员1; 数据库建模师1; 系统分析员1; 系统架构师1; UI设计师1; 高级程序员1; 技术支持工程师1( 售后); 技术支持工程师2（售前）; 配置管理员1 | 104h | 23,250 |
| 334 | 1.9.2 | **检查园区绿化** | 14d | 2023-06-07 | 2023-06-28 | 322 | 252d |  |  | 296h | 62,750 |
| 335 | 1.9.2.1 | 概要设计 | 2d | 2023-06-07 | 2023-06-08 | 322 | 252d | 0d | 项目经理; UI设计师1; 系统架构师1 | 48h | 10,000 |
| 336 | 1.9.2.2 | 撰写概要设计说明书 | 1d | 2023-06-09 | 2023-06-09 | 335 | 252d | 0d | 软件测试工程师1; UI设计师1; 配置管理员1 | 24h | 4,650 |
| 337 | 1.9.2.3 | 数据库设计 | 2d | 2023-06-12 | 2023-06-13 | 336 | 252d | 0d | 数据库建模师1 | 16h | 3,500 |
| 338 | 1.9.2.4 | 撰写数据库说明书 | 1d | 2023-06-14 | 2023-06-14 | 337 | 252d | 0d | 软件测试工程师1; 数据库建模师1 | 16h | 3,600 |
| 339 | 1.9.2.5 | 界面设计 | 2d | 2023-06-15 | 2023-06-16 | 338 | 252d | 0d | UI设计师1; 系统分析员1 | 32h | 6,500 |
| 340 | 1.9.2.6 | 撰写界面设计说明书 | 1d | 2023-06-19 | 2023-06-19 | 339 | 252d | 0d | UI设计师1; 配置管理员1; 系统分析员1 | 24h | 5,250 |
| 341 | 1.9.2.7 | 撰写集成测试计划 | 2d | 2023-06-20 | 2023-06-21 | 340 | 252d | 0d | 软件评测师1 | 16h | 3,000 |
| 342 | 1.9.2.8 | 撰写集成测试用例 | 2d | 2023-06-26 | 2023-06-27 | 341 | 252d | 0d | 软件评测师1 | 16h | 3,000 |
| 343 | 1.9.2.9 | 评审 | 1d | 2023-06-28 | 2023-06-28 | 342 | 252d |  | 项目经理; 软件设计师1; 软件测试工程师1; 软件评测师1; 程序员1; 数据库建模师1; 系统分析员1; 系统架构师1; UI设计师1; 高级程序员1; 技术支持工程师1( 售后); 技术支持工程师2（售前）; 配置管理员1 | 104h | 23,250 |

| ID | WBS | Task | Duration | Start | Finish | Predecessors | Total slack | Free slack | Resources | Work | Cost |
| --- | --- | --- | --- | --- | --- | --- | --- | --- | --- | --- | --- |
| 344 | 1.9.3 | **设施设备打扫** | 14d | 2023-06-07 | 2023-06-28 | 322 | 252d |  |  | 296h | 62,750 |
| 345 | 1.9.3.1 | 概要设计 | 2d | 2023-06-07 | 2023-06-08 | 322 | 252d | 0d | 项目经理; UI设计师2; 系统架构师2 | 48h | 10,000 |
| 346 | 1.9.3.2 | 撰写概要设计说明书 | 1d | 2023-06-09 | 2023-06-09 | 345 | 252d | 0d | UI设计师2; 软件测试工程师2; 配置管理员2 | 24h | 4,650 |
| 347 | 1.9.3.3 | 数据库设计 | 2d | 2023-06-12 | 2023-06-13 | 346 | 252d | 0d | 数据库建模师2 | 16h | 3,500 |
| 348 | 1.9.3.4 | 撰写数据库说明书 | 1d | 2023-06-14 | 2023-06-14 | 347 | 252d | 0d | 软件测试工程师2; 数据库建模师2 | 16h | 3,600 |
| 349 | 1.9.3.5 | 界面设计 | 2d | 2023-06-15 | 2023-06-16 | 348 | 252d | 0d | UI设计师2; 系统分析员2 | 32h | 6,500 |
| 350 | 1.9.3.6 | 撰写界面设计说明书 | 1d | 2023-06-19 | 2023-06-19 | 349 | 252d | 0d | 系统分析员2; UI设计师2; 配置管理员2 | 24h | 5,250 |
| 351 | 1.9.3.7 | 撰写集成测试计划 | 2d | 2023-06-20 | 2023-06-21 | 350 | 252d | 0d | 软件评测师2 | 16h | 3,000 |
| 352 | 1.9.3.8 | 撰写集成测试用例 | 2d | 2023-06-26 | 2023-06-27 | 351 | 252d | 0d | 软件评测师2 | 16h | 3,000 |
| 353 | 1.9.3.9 | 评审 | 1d | 2023-06-28 | 2023-06-28 | 352 | 252d |  | 项目经理; 软件设计师1; 软件测试工程师1; 软件评测师1; 程序员1; 数据库建模师1; 系统分析员1; 系统架构师1; UI设计师1; 高级程序员1; 技术支持工程师1( 售后); 技术支持工程师2（售前）; 配置管理员1 | 104h | 23,250 |
| 354 | 1.9.4 | **应急处理记录** | 20d | 2023-06-07 | 2023-07-06 | 322 | 0d |  |  | 296h | 62,750 |
| 355 | 1.9.4.1 | 概要设计 | 2d | 2023-06-07 | 2023-06-08 | 322 | 0d |  | 项目经理; UI设计师3; 系统架构师1 | 48h | 10,000 |
| 356 | 1.9.4.2 | 撰写概要设计说明书 | 1d | 2023-06-09 | 2023-06-09 | 355 | 0d |  | UI设计师3; 配置管理员3; 软件测试工程师3 | 24h | 4,650 |
| 357 | 1.9.4.3 | 数据库设计 | 2d | 2023-06-12 | 2023-06-13 | 356 | 0d |  | 数据库建模师3 | 16h | 3,500 |
| 358 | 1.9.4.4 | 撰写数据库说明书 | 1d | 2023-06-14 | 2023-06-14 | 357 | 0d |  | 软件测试工程师3; 数据库建模师3 | 16h | 3,600 |
| 359 | 1.9.4.5 | 界面设计 | 2d | 2023-06-15 | 2023-06-16 | 358 | 0d |  | UI设计师3; 系统分析员1 | 32h | 6,500 |
| 360 | 1.9.4.6 | 撰写界面设计说明书 | 1d | 2023-06-19 | 2023-06-19 | 359 | 0d |  | 系统分析员1; UI设计师3; 配置管理员3 | 24h | 5,250 |
| 361 | 1.9.4.7 | 撰写集成测试计划 | 2d | 2023-06-20 | 2023-06-21 | 360 | 0d |  | 软件评测师3 | 16h | 3,000 |
| 362 | 1.9.4.8 | 撰写集成测试用例 | 2d | 2023-06-26 | 2023-06-27 | 361 | 0d |  | 软件评测师3 | 16h | 3,000 |
| 363 | 1.9.4.9 | 评审 | 1d | 2023-06-28 | 2023-06-28 | 362 | 0d |  | 项目经理; 软件设计师1; 软件测试工程师1; 软件评测师1; 程序员1; 数据库建模师1; 系统分析员1; 系统架构师1; UI设计师1; 高级程序员1; 技术支持工程师1( 售后); 技术支持工程师2（售前）; 配置管理员1 | 104h | 23,250 |
| 364 | 1.9.4.10 | 虚任务 | 6d | 2023-06-29 | 2023-07-06 | 363 | 0d |  |  |  |  |
| 365 | 1.10 | **增量(八)行政管理** | 19d | 2023-07-07 | 2023-08-02 | 364 | 0d |  |  | 1480h | 313,750 |
| 366 | 1.10.1 | **部门管理** | 14d | 2023-07-07 | 2023-07-26 | 364 | 232d |  |  | 296h | 62,750 |
| 367 | 1.10.1.1 | 概要设计 | 2d | 2023-07-07 | 2023-07-10 | 364 | 232d | 0d | 项目经理; UI设计师4; 系统架构师2 | 48h | 10,000 |
| 368 | 1.10.1.2 | 撰写概要设计说明书 | 1d | 2023-07-11 | 2023-07-11 | 367 | 232d | 0d | UI设计师4; 配置管理员4; 软件测试工程师4 | 24h | 4,650 |
| 369 | 1.10.1.3 | 数据库设计 | 2d | 2023-07-12 | 2023-07-13 | 368 | 232d | 0d | 数据库建模师4 | 16h | 3,500 |
| 370 | 1.10.1.4 | 撰写数据库说明书 | 1d | 2023-07-14 | 2023-07-14 | 369 | 232d | 0d | 软件测试工程师4; 数据库建模师4 | 16h | 3,600 |
| 371 | 1.10.1.5 | 界面设计 | 2d | 2023-07-17 | 2023-07-18 | 370 | 232d | 0d | 系统分析员2; UI设计师4 | 32h | 6,500 |
| 372 | 1.10.1.6 | 撰写界面设计说明书 | 1d | 2023-07-19 | 2023-07-19 | 371 | 232d | 0d | UI设计师4; 系统分析员2; 配置管理员4 | 24h | 5,250 |
| 373 | 1.10.1.7 | 撰写集成测试计划 | 2d | 2023-07-20 | 2023-07-21 | 372 | 232d | 0d | 软件评测师4 | 16h | 3,000 |
| 374 | 1.10.1.8 | 撰写集成测试用例 | 2d | 2023-07-24 | 2023-07-25 | 373 | 232d | 0d | 软件评测师4 | 16h | 3,000 |
| 375 | 1.10.1.9 | 评审 | 1d | 2023-07-26 | 2023-07-26 | 374 | 232d |  | 项目经理; 软件设计师1; 软件测试工程师1; 软件评测师1; 程序员1; 数据库建模师1; 系统分析员1; 系统架构师1; UI设计师1; 高级程序员1; 技术支持工程师1( 售后); 技术支持工程师2（售前）; 配置管理员1 | 104h | 23,250 |

| ID | WBS | Task | Duration | Start | Finish | Predecessors | Total slack | Free slack | Resources | Work | Cost |
| --- | --- | --- | --- | --- | --- | --- | --- | --- | --- | --- | --- |
| 376 | 1.10.2 | **员工管理** | 14d | 2023-07-07 | 2023-07-26 | 364 | 232d |  |  | 296h | 62,750 |
| 377 | 1.10.2.1 | 概要设计 | 2d | 2023-07-07 | 2023-07-10 | 363 | 232d | 0d | 项目经理; UI设计师5; 系统架构师1 | 48h | 10,000 |
| 378 | 1.10.2.2 | 撰写概要设计说明书 | 1d | 2023-07-11 | 2023-07-11 | 377 | 232d | 0d | UI设计师5; 配置管理员5; 软件测试工程师5 | 24h | 4,650 |
| 379 | 1.10.2.3 | 数据库设计 | 2d | 2023-07-12 | 2023-07-13 | 378 | 232d | 0d | 数据库建模师5 | 16h | 3,500 |
| 380 | 1.10.2.4 | 撰写数据库说明书 | 1d | 2023-07-14 | 2023-07-14 | 379 | 232d | 0d | 软件测试工程师5; 数据库建模师5 | 16h | 3,600 |
| 381 | 1.10.2.5 | 界面设计 | 2d | 2023-07-17 | 2023-07-18 | 380 | 232d | 0d | 系统分析员2; UI设计师5 | 32h | 6,500 |
| 382 | 1.10.2.6 | 撰写界面设计说明书 | 1d | 2023-07-19 | 2023-07-19 | 381 | 232d | 0d | UI设计师5; 系统分析员2; 配置管理员5 | 24h | 5,250 |
| 383 | 1.10.2.7 | 撰写集成测试计划 | 2d | 2023-07-20 | 2023-07-21 | 382 | 232d | 0d | 软件评测师5 | 16h | 3,000 |
| 384 | 1.10.2.8 | 撰写集成测试用例 | 2d | 2023-07-24 | 2023-07-25 | 383 | 232d | 0d | 软件评测师5 | 16h | 3,000 |
| 385 | 1.10.2.9 | 评审 | 1d | 2023-07-26 | 2023-07-26 | 384 | 232d |  | 项目经理; 软件设计师1; 软件测试工程师1; 软件评测师1; 程序员1; 数据库建模师1; 系统分析员1; 系统架构师1; UI设计师1; 高级程序员1; 技术支持工程师1( 售后); 技术支持工程师2（售前）; 配置管理员1 | 104h | 23,250 |
| 386 | 1.10.3 | **排班管理** | 14d | 2023-07-07 | 2023-07-26 | 364 | 232d |  |  | 296h | 62,750 |
| 387 | 1.10.3.1 | 概要设计 | 2d | 2023-07-07 | 2023-07-10 | 363 | 232d | 0d | 项目经理; UI设计师1; 系统架构师1 | 48h | 10,000 |
| 388 | 1.10.3.2 | 撰写概要设计说明书 | 1d | 2023-07-11 | 2023-07-11 | 387 | 232d | 0d | 软件测试工程师1; UI设计师1; 配置管理员1 | 24h | 4,650 |
| 389 | 1.10.3.3 | 数据库设计 | 2d | 2023-07-12 | 2023-07-13 | 388 | 232d | 0d | 数据库建模师1 | 16h | 3,500 |
| 390 | 1.10.3.4 | 撰写数据库说明书 | 1d | 2023-07-14 | 2023-07-14 | 389 | 232d | 0d | 软件测试工程师1; 数据库建模师1 | 16h | 3,600 |
| 391 | 1.10.3.5 | 界面设计 | 2d | 2023-07-17 | 2023-07-18 | 390 | 232d | 0d | UI设计师1; 系统分析员1 | 32h | 6,500 |
| 392 | 1.10.3.6 | 撰写界面设计说明书 | 1d | 2023-07-19 | 2023-07-19 | 391 | 232d | 0d | UI设计师1; 配置管理员1; 系统分析员1 | 24h | 5,250 |
| 393 | 1.10.3.7 | 撰写集成测试计划 | 2d | 2023-07-20 | 2023-07-21 | 392 | 232d | 0d | 软件评测师1 | 16h | 3,000 |
| 394 | 1.10.3.8 | 撰写集成测试用例 | 2d | 2023-07-24 | 2023-07-25 | 393 | 232d | 0d | 软件评测师1 | 16h | 3,000 |
| 395 | 1.10.3.9 | 评审 | 1d | 2023-07-26 | 2023-07-26 | 394 | 232d |  | 项目经理; 软件设计师1; 软件测试工程师1; 软件评测师1; 程序员1; 数据库建模师1; 系统分析员1; 系统架构师1; UI设计师1; 高级程序员1; 技术支持工程师1( 售后); 技术支持工程师2（售前）; 配置管理员1 | 104h | 23,250 |
| 396 | 1.10.4 | **库存管理** | 14d | 2023-07-07 | 2023-07-26 | 364 | 232d |  |  | 296h | 62,750 |
| 397 | 1.10.4.1 | 概要设计 | 2d | 2023-07-07 | 2023-07-10 | 364 | 232d | 0d | 项目经理; UI设计师2; 系统架构师2 | 48h | 10,000 |
| 398 | 1.10.4.2 | 撰写概要设计说明书 | 1d | 2023-07-11 | 2023-07-11 | 397 | 232d | 0d | UI设计师2; 软件测试工程师2; 配置管理员2 | 24h | 4,650 |
| 399 | 1.10.4.3 | 数据库设计 | 2d | 2023-07-12 | 2023-07-13 | 398 | 232d | 0d | 数据库建模师2 | 16h | 3,500 |
| 400 | 1.10.4.4 | 撰写数据库说明书 | 1d | 2023-07-14 | 2023-07-14 | 399 | 232d | 0d | 软件测试工程师2; 数据库建模师2 | 16h | 3,600 |
| 401 | 1.10.4.5 | 界面设计 | 2d | 2023-07-17 | 2023-07-18 | 400 | 232d | 0d | UI设计师2; 系统分析员2 | 32h | 6,500 |
| 402 | 1.10.4.6 | 撰写界面设计说明书 | 1d | 2023-07-19 | 2023-07-19 | 401 | 232d | 0d | 系统分析员2; UI设计师2; 配置管理员2 | 24h | 5,250 |
| 403 | 1.10.4.7 | 撰写集成测试计划 | 2d | 2023-07-20 | 2023-07-21 | 402 | 232d | 0d | 软件评测师2 | 16h | 3,000 |
| 404 | 1.10.4.8 | 撰写集成测试用例 | 2d | 2023-07-24 | 2023-07-25 | 403 | 232d | 0d | 软件评测师2 | 16h | 3,000 |
| 405 | 1.10.4.9 | 评审 | 1d | 2023-07-26 | 2023-07-26 | 404 | 232d |  | 项目经理; 软件设计师1; 软件测试工程师1; 软件评测师1; 程序员1; 数据库建模师1; 系统分析员1; 系统架构师1; UI设计师1; 高级程序员1; 技术支持工程师1( 售后); 技术支持工程师2（售前）; 配置管理员1 | 104h | 23,250 |

| ID | WBS | Task | Duration | Start | Finish | Predecessors | Total slack | Free slack | Resources | Work | Cost |
| --- | --- | --- | --- | --- | --- | --- | --- | --- | --- | --- | --- |
| 406 | 1.10.5 | **资产使用审批** | 19d | 2023-07-07 | 2023-08-02 | 364 | 0d |  |  | 296h | 62,750 |
| 407 | 1.10.5.1 | 概要设计 | 2d | 2023-07-07 | 2023-07-10 | 363 | 0d |  | 项目经理; UI设计师3; 系统架构师1 | 48h | 10,000 |
| 408 | 1.10.5.2 | 撰写概要设计说明书 | 1d | 2023-07-11 | 2023-07-11 | 407 | 0d |  | UI设计师3; 配置管理员3; 软件测试工程师3 | 24h | 4,650 |
| 409 | 1.10.5.3 | 数据库设计 | 2d | 2023-07-12 | 2023-07-13 | 408 | 0d |  | 数据库建模师3 | 16h | 3,500 |
| 410 | 1.10.5.4 | 撰写数据库说明书 | 1d | 2023-07-14 | 2023-07-14 | 409 | 0d |  | 软件测试工程师3; 数据库建模师3 | 16h | 3,600 |
| 411 | 1.10.5.5 | 界面设计 | 2d | 2023-07-17 | 2023-07-18 | 410 | 0d |  | UI设计师3; 系统分析员1 | 32h | 6,500 |
| 412 | 1.10.5.6 | 撰写界面设计说明书 | 1d | 2023-07-19 | 2023-07-19 | 411 | 0d |  | 系统分析员1; UI设计师3; 配置管理员3 | 24h | 5,250 |
| 413 | 1.10.5.7 | 撰写集成测试计划 | 2d | 2023-07-20 | 2023-07-21 | 412 | 0d |  | 软件评测师3 | 16h | 3,000 |
| 414 | 1.10.5.8 | 撰写集成测试用例 | 2d | 2023-07-24 | 2023-07-25 | 413 | 0d |  | 软件评测师3 | 16h | 3,000 |
| 415 | 1.10.5.9 | 评审 | 1d | 2023-07-26 | 2023-07-26 | 414 | 0d |  | 项目经理; 软件设计师1; 软件测试工程师1; 软件评测师1; 程序员1; 数据库建模师1; 系统分析员1; 系统架构师1; UI设计师1; 高级程序员1; 技术支持工程师1( 售后); 技术支持工程师2（售前）; 配置管理员1 | 104h | 23,250 |
| 416 | 1.10.5.10 | 虚任务 | 5d | 2023-07-27 | 2023-08-02 | 415 | 0d |  |  |  |  |
| 417 | 1.11 | **增量(九)财务管理** | 19d | 2023-08-03 | 2023-08-29 | 416 | 0d |  |  | 3552h | 753,000 |
| 418 | 1.11.1 | **物业费管理** | 14d | 2023-08-03 | 2023-08-22 | 416 | 213d |  |  | 296h | 62,750 |
| 419 | 1.11.1.1 | 概要设计 | 2d | 2023-08-03 | 2023-08-04 | 416 | 213d | 0d | 项目经理; UI设计师4; 系统架构师2 | 48h | 10,000 |
| 420 | 1.11.1.2 | 撰写概要设计说明书 | 1d | 2023-08-07 | 2023-08-07 | 419 | 213d | 0d | UI设计师4; 配置管理员4; 软件测试工程师4 | 24h | 4,650 |
| 421 | 1.11.1.3 | 数据库设计 | 2d | 2023-08-08 | 2023-08-09 | 420 | 213d | 0d | 数据库建模师4 | 16h | 3,500 |
| 422 | 1.11.1.4 | 撰写数据库说明书 | 1d | 2023-08-10 | 2023-08-10 | 421 | 213d | 0d | 软件测试工程师4; 数据库建模师4 | 16h | 3,600 |
| 423 | 1.11.1.5 | 界面设计 | 2d | 2023-08-11 | 2023-08-14 | 422 | 213d | 0d | 系统分析员2; UI设计师4 | 32h | 6,500 |
| 424 | 1.11.1.6 | 撰写界面设计说明书 | 1d | 2023-08-15 | 2023-08-15 | 423 | 213d | 0d | UI设计师4; 系统分析员2; 配置管理员4 | 24h | 5,250 |
| 425 | 1.11.1.7 | 撰写集成测试计划 | 2d | 2023-08-16 | 2023-08-17 | 424 | 213d | 0d | 软件评测师4 | 16h | 3,000 |
| 426 | 1.11.1.8 | 撰写集成测试用例 | 2d | 2023-08-18 | 2023-08-21 | 425 | 213d | 0d | 软件评测师4 | 16h | 3,000 |
| 427 | 1.11.1.9 | 评审 | 1d | 2023-08-22 | 2023-08-22 | 426 | 213d |  | 项目经理; 软件设计师1; 软件测试工程师1; 软件评测师1; 程序员1; 数据库建模师1; 系统分析员1; 系统架构师1; UI设计师1; 高级程序员1; 技术支持工程师1( 售后); 技术支持工程师2（售前）; 配置管理员1 | 104h | 23,250 |
| 428 | 1.11.2 | **电梯费用** | 14d | 2023-08-03 | 2023-08-22 | 416 | 213d |  |  | 296h | 62,750 |
| 429 | 1.11.2.1 | 概要设计 | 2d | 2023-08-03 | 2023-08-04 | 415 | 213d | 0d | 项目经理; UI设计师5; 系统架构师1 | 48h | 10,000 |
| 430 | 1.11.2.2 | 撰写概要设计说明书 | 1d | 2023-08-07 | 2023-08-07 | 429 | 213d | 0d | UI设计师5; 配置管理员5; 软件测试工程师5 | 24h | 4,650 |
| 431 | 1.11.2.3 | 数据库设计 | 2d | 2023-08-08 | 2023-08-09 | 430 | 213d | 0d | 数据库建模师5 | 16h | 3,500 |
| 432 | 1.11.2.4 | 撰写数据库说明书 | 1d | 2023-08-10 | 2023-08-10 | 431 | 213d | 0d | 软件测试工程师5; 数据库建模师5 | 16h | 3,600 |
| 433 | 1.11.2.5 | 界面设计 | 2d | 2023-08-11 | 2023-08-14 | 432 | 213d | 0d | 系统分析员2; UI设计师5 | 32h | 6,500 |
| 434 | 1.11.2.6 | 撰写界面设计说明书 | 1d | 2023-08-15 | 2023-08-15 | 433 | 213d | 0d | UI设计师5; 系统分析员2; 配置管理员5 | 24h | 5,250 |
| 435 | 1.11.2.7 | 撰写集成测试计划 | 2d | 2023-08-16 | 2023-08-17 | 434 | 213d | 0d | 软件评测师5 | 16h | 3,000 |
| 436 | 1.11.2.8 | 撰写集成测试用例 | 2d | 2023-08-18 | 2023-08-21 | 435 | 213d | 0d | 软件评测师5 | 16h | 3,000 |
| 437 | 1.11.2.9 | 评审 | 1d | 2023-08-22 | 2023-08-22 | 436 | 213d |  | 项目经理; 软件设计师1; 软件测试工程师1; 软件评测师1; 程序员1; 数据库建模师1; 系统分析员1; 系统架构师1; UI设计师1; 高级程序员1; 技术支持工程师1( 售后); 技术支持工程师2（售前）; 配置管理员1 | 104h | 23,250 |

| ID | WBS | Task | Duration | Start | Finish | Predecessors | Total slack | Free slack | Resources | Work | Cost |
| --- | --- | --- | --- | --- | --- | --- | --- | --- | --- | --- | --- |
| 438 | 1.11.3 | **应收款统计** | 14d | 2023-08-03 | 2023-08-22 | 416 | 213d |  |  | 296h | 62,750 |
| 439 | 1.11.3.1 | 概要设计 | 2d | 2023-08-03 | 2023-08-04 | 416 | 213d | 0d | 项目经理; UI设计师1; 系统架构师1 | 48h | 10,000 |
| 440 | 1.11.3.2 | 撰写概要设计说明书 | 1d | 2023-08-07 | 2023-08-07 | 439 | 213d | 0d | 软件测试工程师1; UI设计师1; 配置管理员1 | 24h | 4,650 |
| 441 | 1.11.3.3 | 数据库设计 | 2d | 2023-08-08 | 2023-08-09 | 440 | 213d | 0d | 数据库建模师1 | 16h | 3,500 |
| 442 | 1.11.3.4 | 撰写数据库说明书 | 1d | 2023-08-10 | 2023-08-10 | 441 | 213d | 0d | 软件测试工程师1; 数据库建模师1 | 16h | 3,600 |
| 443 | 1.11.3.5 | 界面设计 | 2d | 2023-08-11 | 2023-08-14 | 442 | 213d | 0d | UI设计师1; 系统分析员1 | 32h | 6,500 |
| 444 | 1.11.3.6 | 撰写界面设计说明书 | 1d | 2023-08-15 | 2023-08-15 | 443 | 213d | 0d | UI设计师1; 配置管理员1; 系统分析员1 | 24h | 5,250 |
| 445 | 1.11.3.7 | 撰写集成测试计划 | 2d | 2023-08-16 | 2023-08-17 | 444 | 213d | 0d | 软件评测师1 | 16h | 3,000 |
| 446 | 1.11.3.8 | 撰写集成测试用例 | 2d | 2023-08-18 | 2023-08-21 | 445 | 213d | 0d | 软件评测师1 | 16h | 3,000 |
| 447 | 1.11.3.9 | 评审 | 1d | 2023-08-22 | 2023-08-22 | 446 | 213d |  | 项目经理; 软件设计师1; 软件测试工程师1; 软件评测师1; 程序员1; 数据库建模师1; 系统分析员1; 系统架构师1; UI设计师1; 高级程序员1; 技术支持工程师1( 售后); 技术支持工程师2（售前）; 配置管理员1 | 104h | 23,250 |
| 448 | 1.11.4 | **第三方服务管理** | 8d | 2023-08-03 | 2023-08-14 | 416 | 219d |  |  | 296h | 62,750 |
| 449 | 1.11.4.1 | 概要设计 | 2d | 2023-08-03 | 2023-08-04 | 416 | 221d | 0d | 项目经理; UI设计师2; 系统架构师2 | 48h | 10,000 |
| 450 | 1.11.4.2 | 撰写概要设计说明书 | 1d | 2023-08-07 | 2023-08-07 | 449 | 221d | 0d | UI设计师2; 软件测试工程师2; 配置管理员2 | 24h | 4,650 |
| 451 | 1.11.4.3 | 数据库设计 | 2d | 2023-08-08 | 2023-08-09 | 450 | 221d | 0d | 数据库建模师2 | 16h | 3,500 |
| 452 | 1.11.4.4 | 撰写数据库说明书 | 1d | 2023-08-10 | 2023-08-10 | 451 | 221d |  | 软件测试工程师2; 数据库建模师2 | 16h | 3,600 |
| 453 | 1.11.4.5 | 界面设计 | 2d | 2023-08-03 | 2023-08-04 | 360 | 219d | 0d | UI设计师2; 系统分析员2 | 32h | 6,500 |
| 454 | 1.11.4.6 | 撰写界面设计说明书 | 1d | 2023-08-07 | 2023-08-07 | 453 | 219d | 0d | 系统分析员2; UI设计师2; 配置管理员2 | 24h | 5,250 |
| 455 | 1.11.4.7 | 撰写集成测试计划 | 2d | 2023-08-08 | 2023-08-09 | 454 | 219d | 0d | 软件评测师2 | 16h | 3,000 |
| 456 | 1.11.4.8 | 撰写集成测试用例 | 2d | 2023-08-10 | 2023-08-11 | 455 | 219d | 0d | 软件评测师2 | 16h | 3,000 |
| 457 | 1.11.4.9 | 评审 | 1d | 2023-08-14 | 2023-08-14 | 456 | 219d |  | 项目经理; 软件设计师1; 软件测试工程师1; 软件评测师1; 程序员1; 数据库建模师1; 系统分析员1; 系统架构师1; UI设计师1; 高级程序员1; 技术支持工程师1( 售后); 技术支持工程师2（售前）; 配置管理员1 | 104h | 23,250 |
| 458 | 1.11.5 | **其他费用** | 14d | 2023-08-03 | 2023-08-22 | 416 | 213d |  |  | 296h | 62,750 |
| 459 | 1.11.5.1 | 概要设计 | 2d | 2023-08-03 | 2023-08-04 | 416 | 213d | 0d | 项目经理; UI设计师3; 系统架构师1 | 48h | 10,000 |
| 460 | 1.11.5.2 | 撰写概要设计说明书 | 1d | 2023-08-07 | 2023-08-07 | 459 | 213d | 0d | UI设计师3; 配置管理员3; 软件测试工程师3 | 24h | 4,650 |
| 461 | 1.11.5.3 | 数据库设计 | 2d | 2023-08-08 | 2023-08-09 | 460 | 213d | 0d | 数据库建模师3 | 16h | 3,500 |
| 462 | 1.11.5.4 | 撰写数据库说明书 | 1d | 2023-08-10 | 2023-08-10 | 461 | 213d | 0d | 软件测试工程师3; 数据库建模师3 | 16h | 3,600 |
| 463 | 1.11.5.5 | 界面设计 | 2d | 2023-08-11 | 2023-08-14 | 462 | 213d | 0d | UI设计师3; 系统分析员1 | 32h | 6,500 |
| 464 | 1.11.5.6 | 撰写界面设计说明书 | 1d | 2023-08-15 | 2023-08-15 | 463 | 213d | 0d | 系统分析员1; UI设计师3; 配置管理员3 | 24h | 5,250 |
| 465 | 1.11.5.7 | 撰写集成测试计划 | 2d | 2023-08-16 | 2023-08-17 | 464 | 213d | 0d | 软件评测师3 | 16h | 3,000 |
| 466 | 1.11.5.8 | 撰写集成测试用例 | 2d | 2023-08-18 | 2023-08-21 | 465 | 213d | 0d | 软件评测师3 | 16h | 3,000 |
| 467 | 1.11.5.9 | 评审 | 1d | 2023-08-22 | 2023-08-22 | 466 | 213d |  | 项目经理; 软件设计师1; 软件测试工程师1; 软件评测师1; 程序员1; 数据库建模师1; 系统分析员1; 系统架构师1; UI设计师1; 高级程序员1; 技术支持工程师1( 售后); 技术支持工程师2（售前）; 配置管理员1 | 104h | 23,250 |

| ID | WBS | Task | Duration | Start | Finish | Predecessors | Total slack | Free slack | Resources | Work | Cost |
| --- | --- | --- | --- | --- | --- | --- | --- | --- | --- | --- | --- |
| 468 | 1.11.6 | **应付款统计** | 14d | 2023-08-03 | 2023-08-22 | 416 | 213d |  |  | 296h | 62,750 |
| 469 | 1.11.6.1 | 概要设计 | 2d | 2023-08-03 | 2023-08-04 | 416 | 213d | 0d | 项目经理; UI设计师4; 系统架构师2 | 48h | 10,000 |
| 470 | 1.11.6.2 | 撰写概要设计说明书 | 1d | 2023-08-07 | 2023-08-07 | 469 | 213d | 0d | UI设计师4; 配置管理员4; 软件测试工程师4 | 24h | 4,650 |
| 471 | 1.11.6.3 | 数据库设计 | 2d | 2023-08-08 | 2023-08-09 | 470 | 213d | 0d | 数据库建模师4 | 16h | 3,500 |
| 472 | 1.11.6.4 | 撰写数据库说明书 | 1d | 2023-08-10 | 2023-08-10 | 471 | 213d | 0d | 软件测试工程师4; 数据库建模师4 | 16h | 3,600 |
| 473 | 1.11.6.5 | 界面设计 | 2d | 2023-08-11 | 2023-08-14 | 472 | 213d | 0d | 系统分析员2; UI设计师4 | 32h | 6,500 |
| 474 | 1.11.6.6 | 撰写界面设计说明书 | 1d | 2023-08-15 | 2023-08-15 | 473 | 213d | 0d | UI设计师4; 系统分析员2; 配置管理员4 | 24h | 5,250 |
| 475 | 1.11.6.7 | 撰写集成测试计划 | 2d | 2023-08-16 | 2023-08-17 | 474 | 213d | 0d | 软件评测师4 | 16h | 3,000 |
| 476 | 1.11.6.8 | 撰写集成测试用例 | 2d | 2023-08-18 | 2023-08-21 | 475 | 213d | 0d | 软件评测师4 | 16h | 3,000 |
| 477 | 1.11.6.9 | 评审 | 1d | 2023-08-22 | 2023-08-22 | 476 | 213d |  | 项目经理; 软件设计师1; 软件测试工程师1; 软件评测师1; 程序员1; 数据库建模师1; 系统分析员1; 系统架构师1; UI设计师1; 高级程序员1; 技术支持工程师1( 售后); 技术支持工程师2（售前）; 配置管理员1 | 104h | 23,250 |
| 478 | 1.11.7 | **报销费用** | 14d | 2023-08-03 | 2023-08-22 | 416 | 213d |  |  | 296h | 62,750 |
| 479 | 1.11.7.1 | 概要设计 | 2d | 2023-08-03 | 2023-08-04 | 416 | 213d | 0d | 项目经理; UI设计师5; 系统架构师1 | 48h | 10,000 |
| 480 | 1.11.7.2 | 撰写概要设计说明书 | 1d | 2023-08-07 | 2023-08-07 | 479 | 213d | 0d | UI设计师5; 配置管理员5; 软件测试工程师5 | 24h | 4,650 |
| 481 | 1.11.7.3 | 数据库设计 | 2d | 2023-08-08 | 2023-08-09 | 480 | 213d | 0d | 数据库建模师5 | 16h | 3,500 |
| 482 | 1.11.7.4 | 撰写数据库说明书 | 1d | 2023-08-10 | 2023-08-10 | 481 | 213d | 0d | 软件测试工程师5; 数据库建模师5 | 16h | 3,600 |
| 483 | 1.11.7.5 | 界面设计 | 2d | 2023-08-11 | 2023-08-14 | 482 | 213d | 0d | 系统分析员2; UI设计师5 | 32h | 6,500 |
| 484 | 1.11.7.6 | 撰写界面设计说明书 | 1d | 2023-08-15 | 2023-08-15 | 483 | 213d | 0d | UI设计师5; 系统分析员2; 配置管理员5 | 24h | 5,250 |
| 485 | 1.11.7.7 | 撰写集成测试计划 | 2d | 2023-08-16 | 2023-08-17 | 484 | 213d | 0d | 软件评测师5 | 16h | 3,000 |
| 486 | 1.11.7.8 | 撰写集成测试用例 | 2d | 2023-08-18 | 2023-08-21 | 485 | 213d | 0d | 软件评测师5 | 16h | 3,000 |
| 487 | 1.11.7.9 | 评审 | 1d | 2023-08-22 | 2023-08-22 | 486 | 213d |  | 项目经理; 软件设计师1; 软件测试工程师1; 软件评测师1; 程序员1; 数据库建模师1; 系统分析员1; 系统架构师1; UI设计师1; 高级程序员1; 技术支持工程师1( 售后); 技术支持工程师2（售前）; 配置管理员1 | 104h | 23,250 |
| 488 | 1.11.8 | **停车费用** | 14d | 2023-08-03 | 2023-08-22 | 416 | 213d |  |  | 296h | 62,750 |
| 489 | 1.11.8.1 | 概要设计 | 2d | 2023-08-03 | 2023-08-04 | 415 | 213d | 0d | 项目经理; UI设计师4; 系统架构师2 | 48h | 10,000 |
| 490 | 1.11.8.2 | 撰写概要设计说明书 | 1d | 2023-08-07 | 2023-08-07 | 489 | 213d | 0d | UI设计师4; 配置管理员4; 软件测试工程师4 | 24h | 4,650 |
| 491 | 1.11.8.3 | 数据库设计 | 2d | 2023-08-08 | 2023-08-09 | 490 | 213d | 0d | 数据库建模师4 | 16h | 3,500 |
| 492 | 1.11.8.4 | 撰写数据库说明书 | 1d | 2023-08-10 | 2023-08-10 | 491 | 213d | 0d | 软件测试工程师4; 数据库建模师4 | 16h | 3,600 |
| 493 | 1.11.8.5 | 界面设计 | 2d | 2023-08-11 | 2023-08-14 | 492 | 213d | 0d | 系统分析员2; UI设计师4 | 32h | 6,500 |
| 494 | 1.11.8.6 | 撰写界面设计说明书 | 1d | 2023-08-15 | 2023-08-15 | 493 | 213d | 0d | UI设计师4; 系统分析员2; 配置管理员4 | 24h | 5,250 |
| 495 | 1.11.8.7 | 撰写集成测试计划 | 2d | 2023-08-16 | 2023-08-17 | 494 | 213d | 0d | 软件评测师4 | 16h | 3,000 |
| 496 | 1.11.8.8 | 撰写集成测试用例 | 2d | 2023-08-18 | 2023-08-21 | 495 | 213d | 0d | 软件评测师4 | 16h | 3,000 |
| 497 | 1.11.8.9 | 评审 | 1d | 2023-08-22 | 2023-08-22 | 496 | 213d |  | 项目经理; 软件设计师1; 软件测试工程师1; 软件评测师1; 程序员1; 数据库建模师1; 系统分析员1; 系统架构师1; UI设计师1; 高级程序员1; 技术支持工程师1( 售后); 技术支持工程师2（售前）; 配置管理员1 | 104h | 23,250 |

| ID | WBS | Task | Duration | Start | Finish | Predecessors | Total slack | Free slack | Resources | Work | Cost |
| --- | --- | --- | --- | --- | --- | --- | --- | --- | --- | --- | --- |
| 498 | 1.11.9 | **欠款明细** | 14d | 2023-08-03 | 2023-08-22 | 416 | 213d |  |  | 296h | 62,750 |
| 499 | 1.11.9.1 | 概要设计 | 2d | 2023-08-03 | 2023-08-04 | 416 | 213d | 0d | 项目经理; UI设计师5; 系统架构师1 | 48h | 10,000 |
| 500 | 1.11.9.2 | 撰写概要设计说明书 | 1d | 2023-08-07 | 2023-08-07 | 499 | 213d | 0d | UI设计师5; 配置管理员5; 软件测试工程师5 | 24h | 4,650 |
| 501 | 1.11.9.3 | 数据库设计 | 2d | 2023-08-08 | 2023-08-09 | 500 | 213d | 0d | 数据库建模师5 | 16h | 3,500 |
| 502 | 1.11.9.4 | 撰写数据库说明书 | 1d | 2023-08-10 | 2023-08-10 | 501 | 213d | 0d | 软件测试工程师5; 数据库建模师5 | 16h | 3,600 |
| 503 | 1.11.9.5 | 界面设计 | 2d | 2023-08-11 | 2023-08-14 | 502 | 213d | 0d | 系统分析员2; UI设计师5 | 32h | 6,500 |
| 504 | 1.11.9.6 | 撰写界面设计说明书 | 1d | 2023-08-15 | 2023-08-15 | 503 | 213d | 0d | UI设计师5; 系统分析员2; 配置管理员5 | 24h | 5,250 |
| 505 | 1.11.9.7 | 撰写集成测试计划 | 2d | 2023-08-16 | 2023-08-17 | 504 | 213d | 0d | 软件评测师5 | 16h | 3,000 |
| 506 | 1.11.9.8 | 撰写集成测试用例 | 2d | 2023-08-18 | 2023-08-21 | 505 | 213d | 0d | 软件评测师5 | 16h | 3,000 |
| 507 | 1.11.9.9 | 评审 | 1d | 2023-08-22 | 2023-08-22 | 506 | 213d |  | 项目经理; 软件设计师1; 软件测试工程师1; 软件评测师1; 程序员1; 数据库建模师1; 系统分析员1; 系统架构师1; UI设计师1; 高级程序员1; 技术支持工程师1( 售后); 技术支持工程师2（售前）; 配置管理员1 | 104h | 23,250 |
| 508 | 1.11.10 | **毛利率** | 14d | 2023-08-03 | 2023-08-22 | 416 | 213d |  |  | 296h | 62,750 |
| 509 | 1.11.10.1 | 概要设计 | 2d | 2023-08-03 | 2023-08-04 | 415 | 213d | 0d | 项目经理; UI设计师1; 系统架构师1 | 48h | 10,000 |
| 510 | 1.11.10.2 | 撰写概要设计说明书 | 1d | 2023-08-07 | 2023-08-07 | 509 | 213d | 0d | 软件测试工程师1; UI设计师1; 配置管理员1 | 24h | 4,650 |
| 511 | 1.11.10.3 | 数据库设计 | 2d | 2023-08-08 | 2023-08-09 | 510 | 213d | 0d | 数据库建模师1 | 16h | 3,500 |
| 512 | 1.11.10.4 | 撰写数据库说明书 | 1d | 2023-08-10 | 2023-08-10 | 511 | 213d | 0d | 软件测试工程师1; 数据库建模师1 | 16h | 3,600 |
| 513 | 1.11.10.5 | 界面设计 | 2d | 2023-08-11 | 2023-08-14 | 512 | 213d | 0d | UI设计师1; 系统分析员1 | 32h | 6,500 |
| 514 | 1.11.10.6 | 撰写界面设计说明书 | 1d | 2023-08-15 | 2023-08-15 | 513 | 213d | 0d | UI设计师1; 配置管理员1; 系统分析员1 | 24h | 5,250 |
| 515 | 1.11.10.7 | 撰写集成测试计划 | 2d | 2023-08-16 | 2023-08-17 | 514 | 213d | 0d | 软件评测师1 | 16h | 3,000 |
| 516 | 1.11.10.8 | 撰写集成测试用例 | 2d | 2023-08-18 | 2023-08-21 | 515 | 213d | 0d | 软件评测师1 | 16h | 3,000 |
| 517 | 1.11.10.9 | 评审 | 1d | 2023-08-22 | 2023-08-22 | 516 | 213d |  | 项目经理; 软件设计师1; 软件测试工程师1; 软件评测师1; 程序员1; 数据库建模师1; 系统分析员1; 系统架构师1; UI设计师1; 高级程序员1; 技术支持工程师1( 售后); 技术支持工程师2（售前）; 配置管理员1 | 104h | 23,250 |
| 518 | 1.11.11 | **收入支出分析** | 14d | 2023-08-03 | 2023-08-22 | 415 | 213d |  |  | 296h | 62,750 |
| 519 | 1.11.11.1 | 概要设计 | 2d | 2023-08-03 | 2023-08-04 | 415 | 213d | 0d | 项目经理; UI设计师2; 系统架构师2 | 48h | 10,000 |
| 520 | 1.11.11.2 | 撰写概要设计说明书 | 1d | 2023-08-07 | 2023-08-07 | 519 | 213d | 0d | UI设计师2; 软件测试工程师2; 配置管理员2 | 24h | 4,650 |
| 521 | 1.11.11.3 | 数据库设计 | 2d | 2023-08-08 | 2023-08-09 | 520 | 213d | 0d | 数据库建模师2 | 16h | 3,500 |
| 522 | 1.11.11.4 | 撰写数据库说明书 | 1d | 2023-08-10 | 2023-08-10 | 521 | 213d | 0d | 软件测试工程师2; 数据库建模师2 | 16h | 3,600 |
| 523 | 1.11.11.5 | 界面设计 | 2d | 2023-08-11 | 2023-08-14 | 522 | 213d | 0d | UI设计师2; 系统分析员2 | 32h | 6,500 |
| 524 | 1.11.11.6 | 撰写界面设计说明书 | 1d | 2023-08-15 | 2023-08-15 | 523 | 213d | 0d | 系统分析员2; UI设计师2; 配置管理员2 | 24h | 5,250 |
| 525 | 1.11.11.7 | 撰写集成测试计划 | 2d | 2023-08-16 | 2023-08-17 | 524 | 213d | 0d | 软件评测师2 | 16h | 3,000 |
| 526 | 1.11.11.8 | 撰写集成测试用例 | 2d | 2023-08-18 | 2023-08-21 | 525 | 213d | 0d | 软件评测师2 | 16h | 3,000 |
| 527 | 1.11.11.9 | 评审 | 1d | 2023-08-22 | 2023-08-22 | 526 | 213d |  | 项目经理; 软件设计师1; 软件测试工程师1; 软件评测师1; 程序员1; 数据库建模师1; 系统分析员1; 系统架构师1; UI设计师1; 高级程序员1; 技术支持工程师1( 售后); 技术支持工程师2（售前）; 配置管理员1 | 104h | 23,250 |

| ID | WBS | Task | Duration | Start | Finish | Predecessors | Total slack | Free slack | Resources | Work | Cost |
| --- | --- | --- | --- | --- | --- | --- | --- | --- | --- | --- | --- |
| 528 | 1.11.12 | **收费率统计** | 19d | 2023-08-03 | 2023-08-29 | 416 | 0d |  |  | 296h | 62,750 |
| 529 | 1.11.12.1 | 概要设计 | 2d | 2023-08-03 | 2023-08-04 | 416 | 0d |  | 项目经理; UI设计师3; 系统架构师1 | 48h | 10,000 |
| 530 | 1.11.12.2 | 撰写概要设计说明书 | 1d | 2023-08-07 | 2023-08-07 | 529 | 0d |  | UI设计师3; 配置管理员3; 软件测试工程师3 | 24h | 4,650 |
| 531 | 1.11.12.3 | 数据库设计 | 2d | 2023-08-08 | 2023-08-09 | 530 | 0d |  | 数据库建模师3 | 16h | 3,500 |
| 532 | 1.11.12.4 | 撰写数据库说明书 | 1d | 2023-08-10 | 2023-08-10 | 531 | 0d |  | 软件测试工程师3; 数据库建模师3 | 16h | 3,600 |
| 533 | 1.11.12.5 | 界面设计 | 2d | 2023-08-11 | 2023-08-14 | 532 | 0d |  | UI设计师3; 系统分析员1 | 32h | 6,500 |
| 534 | 1.11.12.6 | 撰写界面设计说明书 | 1d | 2023-08-15 | 2023-08-15 | 533 | 0d |  | 系统分析员1; UI设计师3; 配置管理员3 | 24h | 5,250 |
| 535 | 1.11.12.7 | 撰写集成测试计划 | 2d | 2023-08-16 | 2023-08-17 | 534 | 0d |  | 软件评测师3 | 16h | 3,000 |
| 536 | 1.11.12.8 | 撰写集成测试用例 | 2d | 2023-08-18 | 2023-08-21 | 535 | 0d |  | 软件评测师3 | 16h | 3,000 |
| 537 | 1.11.12.9 | 评审 | 1d | 2023-08-22 | 2023-08-22 | 536 | 0d |  | 项目经理; 软件设计师1; 软件测试工程师1; 软件评测师1; 程序员1; 数据库建模师1; 系统分析员1; 系统架构师1; UI设计师1; 高级程序员1; 技术支持工程师1( 售后); 技术支持工程师2（售前）; 配置管理员1 | 104h | 23,250 |
| 538 | 1.11.12.10 | 虚任务 | 5d | 2023-08-23 | 2023-08-29 | 537 | 0d |  |  |  |  |
| 539 | 1.12 | **增量(十)业家之主** | 20d | 2023-08-30 | 2023-09-26 | 538 | 0d |  |  | 2368h | 502,000 |
| 540 | 1.12.1 | **业主档案** | 14d | 2023-08-30 | 2023-09-18 | 538 | 194d |  |  | 296h | 62,750 |
| 541 | 1.12.1.1 | 概要设计 | 2d | 2023-08-30 | 2023-08-31 | 537 | 194d | 0d | 项目经理; UI设计师4; 系统架构师2 | 48h | 10,000 |
| 542 | 1.12.1.2 | 撰写概要设计说明书 | 1d | 2023-09-01 | 2023-09-01 | 541 | 194d | 0d | UI设计师4; 配置管理员4; 软件测试工程师4 | 24h | 4,650 |
| 543 | 1.12.1.3 | 数据库设计 | 2d | 2023-09-04 | 2023-09-05 | 542 | 194d | 0d | 数据库建模师4 | 16h | 3,500 |
| 544 | 1.12.1.4 | 撰写数据库说明书 | 1d | 2023-09-06 | 2023-09-06 | 543 | 194d | 0d | 软件测试工程师4; 数据库建模师4 | 16h | 3,600 |
| 545 | 1.12.1.5 | 界面设计 | 2d | 2023-09-07 | 2023-09-08 | 544 | 194d | 0d | 系统分析员2; UI设计师4 | 32h | 6,500 |
| 546 | 1.12.1.6 | 撰写界面设计说明书 | 1d | 2023-09-11 | 2023-09-11 | 545 | 194d | 0d | UI设计师4; 系统分析员2; 配置管理员4 | 24h | 5,250 |
| 547 | 1.12.1.7 | 撰写集成测试计划 | 2d | 2023-09-12 | 2023-09-13 | 546 | 194d | 0d | 软件评测师4 | 16h | 3,000 |
| 548 | 1.12.1.8 | 撰写集成测试用例 | 2d | 2023-09-14 | 2023-09-15 | 547 | 194d | 0d | 软件评测师4 | 16h | 3,000 |
| 549 | 1.12.1.9 | 评审 | 1d | 2023-09-18 | 2023-09-18 | 548 | 194d |  | 项目经理; 软件设计师1; 软件测试工程师1; 软件评测师1; 程序员1; 数据库建模师1; 系统分析员1; 系统架构师1; UI设计师1; 高级程序员1; 技术支持工程师1( 售后); 技术支持工程师2（售前）; 配置管理员1 | 104h | 23,250 |
| 550 | 1.12.2 | **智能门禁** | 14d | 2023-08-30 | 2023-09-18 | 538 | 194d |  |  | 296h | 62,750 |
| 551 | 1.12.2.1 | 概要设计 | 2d | 2023-08-30 | 2023-08-31 | 538 | 194d | 0d | 项目经理; UI设计师5; 系统架构师1 | 48h | 10,000 |
| 552 | 1.12.2.2 | 撰写概要设计说明书 | 1d | 2023-09-01 | 2023-09-01 | 551 | 194d | 0d | UI设计师5; 配置管理员5; 软件测试工程师5 | 24h | 4,650 |
| 553 | 1.12.2.3 | 数据库设计 | 2d | 2023-09-04 | 2023-09-05 | 552 | 194d | 0d | 数据库建模师5 | 16h | 3,500 |
| 554 | 1.12.2.4 | 撰写数据库说明书 | 1d | 2023-09-06 | 2023-09-06 | 553 | 194d | 0d | 软件测试工程师5; 数据库建模师5 | 16h | 3,600 |
| 555 | 1.12.2.5 | 界面设计 | 2d | 2023-09-07 | 2023-09-08 | 554 | 194d | 0d | 系统分析员2; UI设计师5 | 32h | 6,500 |
| 556 | 1.12.2.6 | 撰写界面设计说明书 | 1d | 2023-09-11 | 2023-09-11 | 555 | 194d | 0d | UI设计师5; 系统分析员2; 配置管理员5 | 24h | 5,250 |
| 557 | 1.12.2.7 | 撰写集成测试计划 | 2d | 2023-09-12 | 2023-09-13 | 556 | 194d | 0d | 软件评测师5 | 16h | 3,000 |
| 558 | 1.12.2.8 | 撰写集成测试用例 | 2d | 2023-09-14 | 2023-09-15 | 557 | 194d | 0d | 软件评测师5 | 16h | 3,000 |
| 559 | 1.12.2.9 | 评审 | 1d | 2023-09-18 | 2023-09-18 | 558 | 194d |  | 项目经理; 软件设计师1; 软件测试工程师1; 软件评测师1; 程序员1; 数据库建模师1; 系统分析员1; 系统架构师1; UI设计师1; 高级程序员1; 技术支持工程师1( 售后); 技术支持工程师2（售前）; 配置管理员1 | 104h | 23,250 |

| ID | WBS | Task | Duration | Start | Finish | Predecessors | Total slack | Free slack | Resources | Work | Cost |
| --- | --- | --- | --- | --- | --- | --- | --- | --- | --- | --- | --- |
| 560 | 1.12.3 | **访客邀请** | 14d | 2023-08-30 | 2023-09-18 | 538 | 194d |  |  | 296h | 62,750 |
| 561 | 1.12.3.1 | 概要设计 | 2d | 2023-08-30 | 2023-08-31 | 538 | 194d | 0d | 项目经理; UI设计师1; 系统架构师1 | 48h | 10,000 |
| 562 | 1.12.3.2 | 撰写概要设计说明书 | 1d | 2023-09-01 | 2023-09-01 | 561 | 194d | 0d | 软件测试工程师1; UI设计师1; 配置管理员1 | 24h | 4,650 |
| 563 | 1.12.3.3 | 数据库设计 | 2d | 2023-09-04 | 2023-09-05 | 562 | 194d | 0d | 数据库建模师1 | 16h | 3,500 |
| 564 | 1.12.3.4 | 撰写数据库说明书 | 1d | 2023-09-06 | 2023-09-06 | 563 | 194d | 0d | 软件测试工程师1; 数据库建模师1 | 16h | 3,600 |
| 565 | 1.12.3.5 | 界面设计 | 2d | 2023-09-07 | 2023-09-08 | 564 | 194d | 0d | UI设计师1; 系统分析员1 | 32h | 6,500 |
| 566 | 1.12.3.6 | 撰写界面设计说明书 | 1d | 2023-09-11 | 2023-09-11 | 565 | 194d | 0d | UI设计师1; 配置管理员1; 系统分析员1 | 24h | 5,250 |
| 567 | 1.12.3.7 | 撰写集成测试计划 | 2d | 2023-09-12 | 2023-09-13 | 566 | 194d | 0d | 软件评测师1 | 16h | 3,000 |
| 568 | 1.12.3.8 | 撰写集成测试用例 | 2d | 2023-09-14 | 2023-09-15 | 567 | 194d | 0d | 软件评测师1 | 16h | 3,000 |
| 569 | 1.12.3.9 | 评审 | 1d | 2023-09-18 | 2023-09-18 | 568 | 194d |  | 项目经理; 软件设计师1; 软件测试工程师1; 软件评测师1; 程序员1; 数据库建模师1; 系统分析员1; 系统架构师1; UI设计师1; 高级程序员1; 技术支持工程师1( 售后); 技术支持工程师2（售前）; 配置管理员1 | 104h | 23,250 |
| 570 | 1.12.4 | **报事报修** | 14d | 2023-08-30 | 2023-09-18 | 537 | 194d |  |  | 296h | 62,750 |
| 571 | 1.12.4.1 | 概要设计 | 2d | 2023-08-30 | 2023-08-31 | 537 | 194d | 0d | 项目经理; UI设计师2; 系统架构师2 | 48h | 10,000 |
| 572 | 1.12.4.2 | 撰写概要设计说明书 | 1d | 2023-09-01 | 2023-09-01 | 571 | 194d | 0d | UI设计师2; 软件测试工程师2; 配置管理员2 | 24h | 4,650 |
| 573 | 1.12.4.3 | 数据库设计 | 2d | 2023-09-04 | 2023-09-05 | 572 | 194d | 0d | 数据库建模师2 | 16h | 3,500 |
| 574 | 1.12.4.4 | 撰写数据库说明书 | 1d | 2023-09-06 | 2023-09-06 | 573 | 194d | 0d | 软件测试工程师2; 数据库建模师2 | 16h | 3,600 |
| 575 | 1.12.4.5 | 界面设计 | 2d | 2023-09-07 | 2023-09-08 | 574 | 194d | 0d | UI设计师2; 系统分析员2 | 32h | 6,500 |
| 576 | 1.12.4.6 | 撰写界面设计说明书 | 1d | 2023-09-11 | 2023-09-11 | 575 | 194d | 0d | 系统分析员2; UI设计师2; 配置管理员2 | 24h | 5,250 |
| 577 | 1.12.4.7 | 撰写集成测试计划 | 2d | 2023-09-12 | 2023-09-13 | 576 | 194d | 0d | 软件评测师2 | 16h | 3,000 |
| 578 | 1.12.4.8 | 撰写集成测试用例 | 2d | 2023-09-14 | 2023-09-15 | 577 | 194d | 0d | 软件评测师2 | 16h | 3,000 |
| 579 | 1.12.4.9 | 评审 | 1d | 2023-09-18 | 2023-09-18 | 578 | 194d |  | 项目经理; 软件设计师1; 软件测试工程师1; 软件评测师1; 程序员1; 数据库建模师1; 系统分析员1; 系统架构师1; UI设计师1; 高级程序员1; 技术支持工程师1( 售后); 技术支持工程师2（售前）; 配置管理员1 | 104h | 23,250 |
| 580 | 1.12.5 | **生活缴费** | 14d | 2023-08-30 | 2023-09-18 | 537 | 194d |  |  | 296h | 62,750 |
| 581 | 1.12.5.1 | 概要设计 | 2d | 2023-08-30 | 2023-08-31 | 537 | 194d | 0d | 项目经理; UI设计师3; 系统架构师1 | 48h | 10,000 |
| 582 | 1.12.5.2 | 撰写概要设计说明书 | 1d | 2023-09-01 | 2023-09-01 | 581 | 194d | 0d | UI设计师3; 配置管理员3; 软件测试工程师3 | 24h | 4,650 |
| 583 | 1.12.5.3 | 数据库设计 | 2d | 2023-09-04 | 2023-09-05 | 582 | 194d | 0d | 数据库建模师3 | 16h | 3,500 |
| 584 | 1.12.5.4 | 撰写数据库说明书 | 1d | 2023-09-06 | 2023-09-06 | 583 | 194d | 0d | 软件测试工程师3; 数据库建模师3 | 16h | 3,600 |
| 585 | 1.12.5.5 | 界面设计 | 2d | 2023-09-07 | 2023-09-08 | 584 | 194d | 0d | UI设计师3; 系统分析员1 | 32h | 6,500 |
| 586 | 1.12.5.6 | 撰写界面设计说明书 | 1d | 2023-09-11 | 2023-09-11 | 585 | 194d | 0d | 系统分析员1; UI设计师3; 配置管理员3 | 24h | 5,250 |
| 587 | 1.12.5.7 | 撰写集成测试计划 | 2d | 2023-09-12 | 2023-09-13 | 586 | 194d | 0d | 软件评测师3 | 16h | 3,000 |
| 588 | 1.12.5.8 | 撰写集成测试用例 | 2d | 2023-09-14 | 2023-09-15 | 587 | 194d | 0d | 软件评测师3 | 16h | 3,000 |
| 589 | 1.12.5.9 | 评审 | 1d | 2023-09-18 | 2023-09-18 | 588 | 194d |  | 项目经理; 软件设计师1; 软件测试工程师1; 软件评测师1; 程序员1; 数据库建模师1; 系统分析员1; 系统架构师1; UI设计师1; 高级程序员1; 技术支持工程师1( 售后); 技术支持工程师2（售前）; 配置管理员1 | 104h | 23,250 |

| ID | WBS | Task | Duration | Start | Finish | Predecessors | Total slack | Free slack | Resources | Work | Cost |
| --- | --- | --- | --- | --- | --- | --- | --- | --- | --- | --- | --- |
| 590 | 1.12.6 | **一键呼叫** | 14d | 2023-08-30 | 2023-09-18 | 537 | 194d |  |  | 296h | 62,750 |
| 591 | 1.12.6.1 | 概要设计 | 2d | 2023-08-30 | 2023-08-31 | 537 | 194d | 0d | 项目经理; UI设计师4; 系统架构师2 | 48h | 10,000 |
| 592 | 1.12.6.2 | 撰写概要设计说明书 | 1d | 2023-09-01 | 2023-09-01 | 591 | 194d | 0d | UI设计师4; 配置管理员4; 软件测试工程师4 | 24h | 4,650 |
| 593 | 1.12.6.3 | 数据库设计 | 2d | 2023-09-04 | 2023-09-05 | 592 | 194d | 0d | 数据库建模师4 | 16h | 3,500 |
| 594 | 1.12.6.4 | 撰写数据库说明书 | 1d | 2023-09-06 | 2023-09-06 | 593 | 194d | 0d | 软件测试工程师4; 数据库建模师4 | 16h | 3,600 |
| 595 | 1.12.6.5 | 界面设计 | 2d | 2023-09-07 | 2023-09-08 | 594 | 194d | 0d | 系统分析员2; UI设计师4 | 32h | 6,500 |
| 596 | 1.12.6.6 | 撰写界面设计说明书 | 1d | 2023-09-11 | 2023-09-11 | 595 | 194d | 0d | UI设计师4; 系统分析员2; 配置管理员4 | 24h | 5,250 |
| 597 | 1.12.6.7 | 撰写集成测试计划 | 2d | 2023-09-12 | 2023-09-13 | 596 | 194d | 0d | 软件评测师4 | 16h | 3,000 |
| 598 | 1.12.6.8 | 撰写集成测试用例 | 2d | 2023-09-14 | 2023-09-15 | 597 | 194d | 0d | 软件评测师4 | 16h | 3,000 |
| 599 | 1.12.6.9 | 评审 | 1d | 2023-09-18 | 2023-09-18 | 598 | 194d |  | 项目经理; 软件设计师1; 软件测试工程师1; 软件评测师1; 程序员1; 数据库建模师1; 系统分析员1; 系统架构师1; UI设计师1; 高级程序员1; 技术支持工程师1( 售后); 技术支持工程师2（售前）; 配置管理员1 | 104h | 23,250 |
| 600 | 1.12.7 | **账单查询** | 14d | 2023-08-30 | 2023-09-18 | 537 | 194d |  |  | 296h | 62,750 |
| 601 | 1.12.7.1 | 概要设计 | 2d | 2023-08-30 | 2023-08-31 | 537 | 194d | 0d | 项目经理; UI设计师5; 系统架构师1 | 48h | 10,000 |
| 602 | 1.12.7.2 | 撰写概要设计说明书 | 1d | 2023-09-01 | 2023-09-01 | 601 | 194d | 0d | UI设计师5; 配置管理员5; 软件测试工程师5 | 24h | 4,650 |
| 603 | 1.12.7.3 | 数据库设计 | 2d | 2023-09-04 | 2023-09-05 | 602 | 194d | 0d | 数据库建模师5 | 16h | 3,500 |
| 604 | 1.12.7.4 | 撰写数据库说明书 | 1d | 2023-09-06 | 2023-09-06 | 603 | 194d | 0d | 软件测试工程师5; 数据库建模师5 | 16h | 3,600 |
| 605 | 1.12.7.5 | 界面设计 | 2d | 2023-09-07 | 2023-09-08 | 604 | 194d | 0d | 系统分析员2; UI设计师5 | 32h | 6,500 |
| 606 | 1.12.7.6 | 撰写界面设计说明书 | 1d | 2023-09-11 | 2023-09-11 | 605 | 194d | 0d | UI设计师5; 系统分析员2; 配置管理员5 | 24h | 5,250 |
| 607 | 1.12.7.7 | 撰写集成测试计划 | 2d | 2023-09-12 | 2023-09-13 | 606 | 194d | 0d | 软件评测师5 | 16h | 3,000 |
| 608 | 1.12.7.8 | 撰写集成测试用例 | 2d | 2023-09-14 | 2023-09-15 | 607 | 194d | 0d | 软件评测师5 | 16h | 3,000 |
| 609 | 1.12.7.9 | 评审 | 1d | 2023-09-18 | 2023-09-18 | 608 | 194d |  | 项目经理; 软件设计师1; 软件测试工程师1; 软件评测师1; 程序员1; 数据库建模师1; 系统分析员1; 系统架构师1; UI设计师1; 高级程序员1; 技术支持工程师1( 售后); 技术支持工程师2（售前）; 配置管理员1 | 104h | 23,250 |
| 610 | 1.12.8 | **业主服务** | 20d | 2023-08-30 | 2023-09-26 | 537 | 0d |  |  | 296h | 62,750 |
| 611 | 1.12.8.1 | 概要设计 | 2d | 2023-08-30 | 2023-08-31 | 537 | 0d |  | 项目经理; UI设计师1; 系统架构师1 | 48h | 10,000 |
| 612 | 1.12.8.2 | 撰写概要设计说明书 | 1d | 2023-09-01 | 2023-09-01 | 611 | 0d |  | 软件测试工程师1; UI设计师1; 配置管理员1 | 24h | 4,650 |
| 613 | 1.12.8.3 | 数据库设计 | 2d | 2023-09-04 | 2023-09-05 | 612 | 0d |  | 数据库建模师1 | 16h | 3,500 |
| 614 | 1.12.8.4 | 撰写数据库说明书 | 1d | 2023-09-06 | 2023-09-06 | 613 | 0d |  | 软件测试工程师1; 数据库建模师1 | 16h | 3,600 |
| 615 | 1.12.8.5 | 界面设计 | 2d | 2023-09-07 | 2023-09-08 | 614 | 0d |  | UI设计师1; 系统分析员1 | 32h | 6,500 |
| 616 | 1.12.8.6 | 撰写界面设计说明书 | 1d | 2023-09-11 | 2023-09-11 | 615 | 0d |  | UI设计师1; 配置管理员1; 系统分析员1 | 24h | 5,250 |
| 617 | 1.12.8.7 | 撰写集成测试计划 | 2d | 2023-09-12 | 2023-09-13 | 616 | 0d |  | 软件评测师1 | 16h | 3,000 |
| 618 | 1.12.8.8 | 撰写集成测试用例 | 2d | 2023-09-14 | 2023-09-15 | 617 | 0d |  | 软件评测师1 | 16h | 3,000 |
| 619 | 1.12.8.9 | 评审 | 1d | 2023-09-18 | 2023-09-18 | 618 | 0d |  | 项目经理; 软件设计师1; 软件测试工程师1; 软件评测师1; 程序员1; 数据库建模师1; 系统分析员1; 系统架构师1; UI设计师1; 高级程序员1; 技术支持工程师1( 售后); 技术支持工程师2（售前）; 配置管理员1 | 104h | 23,250 |
| 620 | 1.12.8.10 | 虚任务 | 6d | 2023-09-19 | 2023-09-26 | 619 | 0d |  |  |  |  |

| ID | WBS | Task | Duration | Start | Finish | Predecessors | Total slack | Free slack | Resources | Work | Cost |
| --- | --- | --- | --- | --- | --- | --- | --- | --- | --- | --- | --- |
| 621 | 1.13 | **增量(十一)维护园区（微信小程序）** | 20d | 2023-09-27 | 2023-10-24 | 620 | 0d |  |  | 888h | 188,250 |
| 622 | 1.13.1 | **日常维修** | 14d | 2023-09-27 | 2023-10-16 | 620 | 174d |  |  | 296h | 62,750 |
| 623 | 1.13.1.1 | 概要设计 | 2d | 2023-09-27 | 2023-09-28 | 620 | 174d | 0d | 项目经理; UI设计师2; 系统架构师2 | 48h | 10,000 |
| 624 | 1.13.1.2 | 撰写概要设计说明书 | 1d | 2023-09-29 | 2023-09-29 | 623 | 174d | 0d | UI设计师2; 软件测试工程师2; 配置管理员2 | 24h | 4,650 |
| 625 | 1.13.1.3 | 数据库设计 | 2d | 2023-10-02 | 2023-10-03 | 624 | 174d | 0d | 数据库建模师2 | 16h | 3,500 |
| 626 | 1.13.1.4 | 撰写数据库说明书 | 1d | 2023-10-04 | 2023-10-04 | 625 | 174d | 0d | 软件测试工程师2; 数据库建模师2 | 16h | 3,600 |
| 627 | 1.13.1.5 | 界面设计 | 2d | 2023-10-05 | 2023-10-06 | 626 | 174d | 0d | UI设计师2; 系统分析员2 | 32h | 6,500 |
| 628 | 1.13.1.6 | 撰写界面设计说明书 | 1d | 2023-10-09 | 2023-10-09 | 627 | 174d | 0d | 系统分析员2; UI设计师2; 配置管理员2 | 24h | 5,250 |
| 629 | 1.13.1.7 | 撰写集成测试计划 | 2d | 2023-10-10 | 2023-10-11 | 628 | 174d | 0d | 软件评测师2 | 16h | 3,000 |
| 630 | 1.13.1.8 | 撰写集成测试用例 | 2d | 2023-10-12 | 2023-10-13 | 629 | 174d | 0d | 软件评测师2 | 16h | 3,000 |
| 631 | 1.13.1.9 | 评审 | 1d | 2023-10-16 | 2023-10-16 | 630 | 174d |  | 项目经理; 软件设计师1; 软件测试工程师1; 软件评测师1; 程序员1; 数据库建模师1; 系统分析员1; 系统架构师1; UI设计师1; 高级程序员1; 技术支持工程师1( 售后); 技术支持工程师2（售前）; 配置管理员1 | 104h | 23,250 |
| 632 | 1.13.2 | **日常巡检** | 14d | 2023-09-27 | 2023-10-16 | 620 | 174d |  |  | 296h | 62,750 |
| 633 | 1.13.2.1 | 概要设计 | 2d | 2023-09-27 | 2023-09-28 | 620 | 174d | 0d | 项目经理; UI设计师3; 系统架构师1 | 48h | 10,000 |
| 634 | 1.13.2.2 | 撰写概要设计说明书 | 1d | 2023-09-29 | 2023-09-29 | 633 | 174d | 0d | UI设计师3; 配置管理员3; 软件测试工程师3 | 24h | 4,650 |
| 635 | 1.13.2.3 | 数据库设计 | 2d | 2023-10-02 | 2023-10-03 | 634 | 174d | 0d | 数据库建模师3 | 16h | 3,500 |
| 636 | 1.13.2.4 | 撰写数据库说明书 | 1d | 2023-10-04 | 2023-10-04 | 635 | 174d | 0d | 软件测试工程师3; 数据库建模师3 | 16h | 3,600 |
| 637 | 1.13.2.5 | 界面设计 | 2d | 2023-10-05 | 2023-10-06 | 636 | 174d | 0d | UI设计师3; 系统分析员1 | 32h | 6,500 |
| 638 | 1.13.2.6 | 撰写界面设计说明书 | 1d | 2023-10-09 | 2023-10-09 | 637 | 174d | 0d | 系统分析员1; UI设计师3; 配置管理员3 | 24h | 5,250 |
| 639 | 1.13.2.7 | 撰写集成测试计划 | 2d | 2023-10-10 | 2023-10-11 | 638 | 174d | 0d | 软件评测师3 | 16h | 3,000 |
| 640 | 1.13.2.8 | 撰写集成测试用例 | 2d | 2023-10-12 | 2023-10-13 | 639 | 174d | 0d | 软件评测师3 | 16h | 3,000 |
| 641 | 1.13.2.9 | 评审 | 1d | 2023-10-16 | 2023-10-16 | 640 | 174d |  | 项目经理; 软件设计师1; 软件测试工程师1; 软件评测师1; 程序员1; 数据库建模师1; 系统分析员1; 系统架构师1; UI设计师1; 高级程序员1; 技术支持工程师1( 售后); 技术支持工程师2（售前）; 配置管理员1 | 104h | 23,250 |
| 642 | 1.13.3 | **园区工程管理** | 20d | 2023-09-27 | 2023-10-24 | 620 | 0d |  |  | 296h | 62,750 |
| 643 | 1.13.3.1 | 概要设计 | 2d | 2023-09-27 | 2023-09-28 | 620 | 0d |  | 项目经理; UI设计师4; 系统架构师2 | 48h | 10,000 |
| 644 | 1.13.3.2 | 撰写概要设计说明书 | 1d | 2023-09-29 | 2023-09-29 | 643 | 0d |  | UI设计师4; 配置管理员4; 软件测试工程师4 | 24h | 4,650 |
| 645 | 1.13.3.3 | 数据库设计 | 2d | 2023-10-02 | 2023-10-03 | 644 | 0d |  | 数据库建模师4 | 16h | 3,500 |
| 646 | 1.13.3.4 | 撰写数据库说明书 | 1d | 2023-10-04 | 2023-10-04 | 645 | 0d |  | 软件测试工程师4; 数据库建模师4 | 16h | 3,600 |
| 647 | 1.13.3.5 | 界面设计 | 2d | 2023-10-05 | 2023-10-06 | 646 | 0d |  | 系统分析员2; UI设计师4 | 32h | 6,500 |
| 648 | 1.13.3.6 | 撰写界面设计说明书 | 1d | 2023-10-09 | 2023-10-09 | 647 | 0d |  | UI设计师4; 系统分析员2; 配置管理员4 | 24h | 5,250 |
| 649 | 1.13.3.7 | 撰写集成测试计划 | 2d | 2023-10-10 | 2023-10-11 | 648 | 0d |  | 软件评测师4 | 16h | 3,000 |
| 650 | 1.13.3.8 | 撰写集成测试用例 | 2d | 2023-10-12 | 2023-10-13 | 649 | 0d |  | 软件评测师4 | 16h | 3,000 |
| 651 | 1.13.3.9 | 评审 | 1d | 2023-10-16 | 2023-10-16 | 650 | 0d |  | 项目经理; 软件设计师1; 软件测试工程师1; 软件评测师1; 程序员1; 数据库建模师1; 系统分析员1; 系统架构师1; UI设计师1; 高级程序员1; 技术支持工程师1( 售后); 技术支持工程师2（售前）; 配置管理员1 | 104h | 23,250 |
| 652 | 1.13.3.10 | 虚任务 | 6d | 2023-10-17 | 2023-10-24 | 651 | 0d |  |  |  |  |

| ID | WBS | Task | Duration | Start | Finish | Predecessors | Total slack | Free slack | Resources | Work | Cost |
| --- | --- | --- | --- | --- | --- | --- | --- | --- | --- | --- | --- |
| 653 | 1.14 | **增量(十二)园区环境（微信小程序）** | 20d | 2023-10-25 | 2023-11-21 | 652 | 0d |  |  | 888h | 188,250 |
| 654 | 1.14.1 | **园区环卫检查** | 14d | 2023-10-25 | 2023-11-13 | 652 | 154d |  |  | 296h | 62,750 |
| 655 | 1.14.1.1 | 概要设计 | 2d | 2023-10-25 | 2023-10-26 | 652 | 154d | 0d | 项目经理; UI设计师5; 系统架构师1 | 48h | 10,000 |
| 656 | 1.14.1.2 | 撰写概要设计说明书 | 1d | 2023-10-27 | 2023-10-27 | 655 | 154d | 0d | UI设计师5; 配置管理员5; 软件测试工程师5 | 24h | 4,650 |
| 657 | 1.14.1.3 | 数据库设计 | 2d | 2023-10-30 | 2023-10-31 | 656 | 154d | 0d | 数据库建模师5 | 16h | 3,500 |
| 658 | 1.14.1.4 | 撰写数据库说明书 | 1d | 2023-11-01 | 2023-11-01 | 657 | 154d | 0d | 软件测试工程师5; 数据库建模师5 | 16h | 3,600 |
| 659 | 1.14.1.5 | 界面设计 | 2d | 2023-11-02 | 2023-11-03 | 658 | 154d | 0d | 系统分析员2; UI设计师5 | 32h | 6,500 |
| 660 | 1.14.1.6 | 撰写界面设计说明书 | 1d | 2023-11-06 | 2023-11-06 | 659 | 154d | 0d | UI设计师5; 系统分析员2; 配置管理员5 | 24h | 5,250 |
| 661 | 1.14.1.7 | 撰写集成测试计划 | 2d | 2023-11-07 | 2023-11-08 | 660 | 154d | 0d | 软件评测师5 | 16h | 3,000 |
| 662 | 1.14.1.8 | 撰写集成测试用例 | 2d | 2023-11-09 | 2023-11-10 | 661 | 154d | 0d | 软件评测师5 | 16h | 3,000 |
| 663 | 1.14.1.9 | 评审 | 1d | 2023-11-13 | 2023-11-13 | 662 | 154d |  | 项目经理; 软件设计师1; 软件测试工程师1; 软件评测师1; 程序员1; 数据库建模师1; 系统分析员1; 系统架构师1; UI设计师1; 高级程序员1; 技术支持工程师1( 售后); 技术支持工程师2（售前）; 配置管理员1 | 104h | 23,250 |
| 664 | 1.14.2 | **园区绿化检查** | 14d | 2023-10-25 | 2023-11-13 | 652 | 154d |  |  | 296h | 62,750 |
| 665 | 1.14.2.1 | 概要设计 | 2d | 2023-10-25 | 2023-10-26 | 652 | 154d | 0d | 项目经理; UI设计师1; 系统架构师1 | 48h | 10,000 |
| 666 | 1.14.2.2 | 撰写概要设计说明书 | 1d | 2023-10-27 | 2023-10-27 | 665 | 154d | 0d | 软件测试工程师1; UI设计师1; 配置管理员1 | 24h | 4,650 |
| 667 | 1.14.2.3 | 数据库设计 | 2d | 2023-10-30 | 2023-10-31 | 666 | 154d | 0d | 数据库建模师1 | 16h | 3,500 |
| 668 | 1.14.2.4 | 撰写数据库说明书 | 1d | 2023-11-01 | 2023-11-01 | 667 | 154d | 0d | 软件测试工程师1; 数据库建模师1 | 16h | 3,600 |
| 669 | 1.14.2.5 | 界面设计 | 2d | 2023-11-02 | 2023-11-03 | 668 | 154d | 0d | UI设计师1; 系统分析员1 | 32h | 6,500 |
| 670 | 1.14.2.6 | 撰写界面设计说明书 | 1d | 2023-11-06 | 2023-11-06 | 669 | 154d | 0d | UI设计师1; 配置管理员1; 系统分析员1 | 24h | 5,250 |
| 671 | 1.14.2.7 | 撰写集成测试计划 | 2d | 2023-11-07 | 2023-11-08 | 670 | 154d | 0d | 软件评测师1 | 16h | 3,000 |
| 672 | 1.14.2.8 | 撰写集成测试用例 | 2d | 2023-11-09 | 2023-11-10 | 671 | 154d | 0d | 软件评测师1 | 16h | 3,000 |
| 673 | 1.14.2.9 | 评审 | 1d | 2023-11-13 | 2023-11-13 | 672 | 154d |  | 项目经理; 软件设计师1; 软件测试工程师1; 软件评测师1; 程序员1; 数据库建模师1; 系统分析员1; 系统架构师1; UI设计师1; 高级程序员1; 技术支持工程师1( 售后); 技术支持工程师2（售前）; 配置管理员1 | 104h | 23,250 |
| 674 | 1.14.3 | **设备设施打扫** | 20d | 2023-10-25 | 2023-11-21 | 652 | 0d |  |  | 296h | 62,750 |
| 675 | 1.14.3.1 | 概要设计 | 2d | 2023-10-25 | 2023-10-26 | 652 | 0d |  | 项目经理; UI设计师2; 系统架构师2 | 48h | 10,000 |
| 676 | 1.14.3.2 | 撰写概要设计说明书 | 1d | 2023-10-27 | 2023-10-27 | 675 | 0d |  | UI设计师2; 软件测试工程师2; 配置管理员2 | 24h | 4,650 |
| 677 | 1.14.3.3 | 数据库设计 | 2d | 2023-10-30 | 2023-10-31 | 676 | 0d |  | 数据库建模师2 | 16h | 3,500 |
| 678 | 1.14.3.4 | 撰写数据库说明书 | 1d | 2023-11-01 | 2023-11-01 | 677 | 0d |  | 软件测试工程师2; 数据库建模师2 | 16h | 3,600 |
| 679 | 1.14.3.5 | 界面设计 | 2d | 2023-11-02 | 2023-11-03 | 678 | 0d |  | UI设计师2; 系统分析员2 | 32h | 6,500 |
| 680 | 1.14.3.6 | 撰写界面设计说明书 | 1d | 2023-11-06 | 2023-11-06 | 679 | 0d |  | 系统分析员2; UI设计师2; 配置管理员2 | 24h | 5,250 |
| 681 | 1.14.3.7 | 撰写集成测试计划 | 2d | 2023-11-07 | 2023-11-08 | 680 | 0d |  | 软件评测师2 | 16h | 3,000 |
| 682 | 1.14.3.8 | 撰写集成测试用例 | 2d | 2023-11-09 | 2023-11-10 | 681 | 0d |  | 软件评测师2 | 16h | 3,000 |
| 683 | 1.14.3.9 | 评审 | 1d | 2023-11-13 | 2023-11-13 | 682 | 0d |  | 项目经理; 软件设计师1; 软件测试工程师1; 软件评测师1; 程序员1; 数据库建模师1; 系统分析员1; 系统架构师1; UI设计师1; 高级程序员1; 技术支持工程师1( 售后); 技术支持工程师2（售前）; 配置管理员1 | 104h | 23,250 |
| 684 | 1.14.3.10 | 虚任务 | 6d | 2023-11-14 | 2023-11-21 | 683 | 0d |  |  |  |  |

| ID | WBS | Task | Duration | Start | Finish | Predecessors | Total slack | Free slack | Resources | Work | Cost |
| --- | --- | --- | --- | --- | --- | --- | --- | --- | --- | --- | --- |
| 685 | 1.15 | **增量(十三)行政管理(微信小程序)** | 20d | 2023-11-21 | 2023-12-19 | 684 | 0d |  |  | 576h | 122,700 |
| 686 | 1.15.1 | **管理排班** | 14d | 2023-11-22 | 2023-12-11 | 684 | 134d |  |  | 296h | 62,750 |
| 687 | 1.15.1.1 | 概要设计 | 2d | 2023-11-22 | 2023-11-23 | 683 | 134d | 0d | 项目经理; UI设计师3; 系统架构师1 | 48h | 10,000 |
| 688 | 1.15.1.2 | 撰写概要设计说明书 | 1d | 2023-11-24 | 2023-11-24 | 687 | 134d | 0d | UI设计师3; 配置管理员3; 软件测试工程师3 | 24h | 4,650 |
| 689 | 1.15.1.3 | 数据库设计 | 2d | 2023-11-27 | 2023-11-28 | 688 | 134d | 0d | 数据库建模师3 | 16h | 3,500 |
| 690 | 1.15.1.4 | 撰写数据库说明书 | 1d | 2023-11-29 | 2023-11-29 | 689 | 134d | 0d | 软件测试工程师3; 数据库建模师3 | 16h | 3,600 |
| 691 | 1.15.1.5 | 界面设计 | 2d | 2023-11-30 | 2023-12-01 | 690 | 134d | 0d | UI设计师3; 系统分析员1 | 32h | 6,500 |
| 692 | 1.15.1.6 | 撰写界面设计说明书 | 1d | 2023-12-04 | 2023-12-04 | 691 | 134d | 0d | 系统分析员1; UI设计师3; 配置管理员3 | 24h | 5,250 |
| 693 | 1.15.1.7 | 撰写集成测试计划 | 2d | 2023-12-05 | 2023-12-06 | 692 | 134d | 0d | 软件评测师3 | 16h | 3,000 |
| 694 | 1.15.1.8 | 撰写集成测试用例 | 2d | 2023-12-07 | 2023-12-08 | 693 | 134d | 0d | 软件评测师3 | 16h | 3,000 |
| 695 | 1.15.1.9 | 评审 | 1d | 2023-12-11 | 2023-12-11 | 694 | 134d |  | 项目经理; 软件设计师1; 软件测试工程师1; 软件评测师1; 程序员1; 数据库建模师1; 系统分析员1; 系统架构师1; UI设计师1; 高级程序员1; 技术支持工程师1( 售后); 技术支持工程师2（售前）; 配置管理员1 | 104h | 23,250 |
| 696 | 1.15.2 | **资产使用审批** | 20d | 2023-11-21 | 2023-12-19 | 683 | 0d |  |  | 280h | 59,950 |
| 697 | 1.15.2.1 | 概要设计 | 2d | 2023-11-21 | 2023-11-23 | 683 | 0d |  | 项目经理; UI设计师4; 系统架构师2 | 32h | 7,200 |
| 698 | 1.15.2.2 | 撰写概要设计说明书 | 1d | 2023-11-24 | 2023-11-24 | 697 | 0d |  | UI设计师4; 配置管理员4; 软件测试工程师4 | 24h | 4,650 |
| 699 | 1.15.2.3 | 数据库设计 | 2d | 2023-11-27 | 2023-11-28 | 698 | 0d |  | 数据库建模师4 | 16h | 3,500 |
| 700 | 1.15.2.4 | 撰写数据库说明书 | 1d | 2023-11-29 | 2023-11-29 | 699 | 0d |  | 软件测试工程师4; 数据库建模师4 | 16h | 3,600 |
| 701 | 1.15.2.5 | 界面设计 | 2d | 2023-11-30 | 2023-12-01 | 700 | 0d |  | 系统分析员2; UI设计师4 | 32h | 6,500 |
| 702 | 1.15.2.6 | 撰写界面设计说明书 | 1d | 2023-12-04 | 2023-12-04 | 701 | 0d |  | UI设计师4; 系统分析员2; 配置管理员4 | 24h | 5,250 |
| 703 | 1.15.2.7 | 撰写集成测试计划 | 2d | 2023-12-05 | 2023-12-06 | 702 | 0d |  | 软件评测师4 | 16h | 3,000 |
| 704 | 1.15.2.8 | 撰写集成测试用例 | 2d | 2023-12-07 | 2023-12-08 | 703 | 0d |  | 软件评测师4 | 16h | 3,000 |
| 705 | 1.15.2.9 | 评审 | 1d | 2023-12-11 | 2023-12-11 | 704 | 0d |  | 项目经理; 软件设计师1; 软件测试工程师1; 软件评测师1; 程序员1; 数据库建模师1; 系统分析员1; 系统架构师1; UI设计师1; 高级程序员1; 技术支持工程师1( 售后); 技术支持工程师2（售前）; 配置管理员1 | 104h | 23,250 |
| 706 | 1.15.2.10 | 虚任务 | 6d | 2023-12-12 | 2023-12-19 | 705 | 0d |  |  |  |  |
| 707 | 1.16 | **详细设计** | 46d | 2023-12-20 | 2024-02-21 | 706 | 0d |  |  | 2400h | 372,500 |
| 708 | 1.16.1 | 模块设计 | 20d | 2023-12-20 | 2024-01-16 | 706 | 0d |  | UI设计师1; 程序员1; 高级程序员1; 配置管理员1; 软件测试工程师1; 软件评测师1; 软件设计师1; 系统分析员1; 系统架构师1 | 1440h | 215,250 |
| 709 | 1.16.2 | 撰写详细设计说明书 | 2d | 2024-01-17 | 2024-01-18 | 708 | 0d |  | 配置管理员1; 系统分析员1 | 32h | 5,750 |
| 710 | 1.16.3 | 撰写单元测试计划 | 1d | 2024-01-19 | 2024-01-19 | 709 | 0d |  | 配置管理员1; 软件评测师1; 系统分析员1 | 24h | 5,250 |
| 711 | 1.16.4 | 撰写单元测试用例 | 20d | 2024-01-22 | 2024-02-16 | 710 | 0d |  | 软件评测师1; 软件评测师2; 软件评测师3; 软件评测师4; 软件评测师5 | 800h | 123,000 |
| 712 | 1.16.5 | 评审 | 1d | 2024-02-19 | 2024-02-19 | 711 | 0d |  | 项目经理; 软件设计师1; 软件测试工程师1; 软件评测师1; 程序员1; 数据库建模师1; 系统分析员1; 系统架构师1; UI设计师1; 高级程序员1; 技术支持工程师1( 售后); 技术支持工程师2（售前）; 配置管理员1 | 104h | 23,250 |
| 713 | 1.16.6 | 虚任务 | 2d | 2024-02-20 | 2024-02-21 | 712 | 0d |  |  |  |  |

| ID | WBS | Task | Duration | Start | Finish | Predecessors | Total slack | Free slack | Resources | Work | Cost |
| --- | --- | --- | --- | --- | --- | --- | --- | --- | --- | --- | --- |
| 714 | 1.17 | **编码** | 33d | 2024-02-22 | 2024-04-08 | 713 | 0d |  |  | 5440h | 1,002,700 |
| 715 | 1.17.1 | **完成系统设置编码** | 9d | 2024-02-22 | 2024-03-05 | 713 | 73d |  |  | 408h | 75,200 |
| 716 | 1.17.1.1 | 编码 | 3d | 2024-02-22 | 2024-02-26 | 713 | 73d | 0d | UI设计师1; 程序员1; 高级程序员1; 配置管理员1; 软件测试工程师1; 软件评测师1; 软件设计师1; 系统分析员2; 系统架构师2; 数据库建模师1 | 240h | 41,650 |
| 717 | 1.17.1.2 | 调试 | 3d | 2024-02-27 | 2024-02-29 | 716 | 73d | 0d | 程序员1; 软件测试工程师1 | 48h | 7,000 |
| 718 | 1.17.1.3 | 执行单元测试 | 1d | 2024-03-01 | 2024-03-01 | 717 | 73d | 0d | 软件测试工程师1 | 8h | 1,500 |
| 719 | 1.17.1.4 | 撰写单元测试报告 | 1d | 2024-03-04 | 2024-03-04 | 718 | 73d | 0d | 软件评测师1 | 8h | 1,800 |
| 720 | 1.17.1.5 | 评审 | 1d | 2024-03-05 | 2024-03-05 | 719 | 73d |  | 项目经理; 软件设计师1; 软件测试工程师1; 软件评测师1; 程序员1; 数据库建模师1; 系统分析员1; 系统架构师1; UI设计师1; 高级程序员1; 技术支持工程师1( 售后); 技术支持工程师2（售前）; 配置管理员1 | 104h | 23,250 |
| 721 | 1.17.2 | **完成公司展示编码** | 9d | 2024-02-22 | 2024-03-05 | 713 | 73d |  |  | 424h | 78,350 |
| 722 | 1.17.2.1 | 编码 | 3d | 2024-02-22 | 2024-02-26 | 713 | 73d | 0d | UI设计师2; 程序员2; 高级程序员2; 软件测试工程师2; 软件评测师2; 软件设计师2; 配置管理员2; 系统分析员1; 系统架构师1; 数据库建模师2 | 240h | 41,650 |
| 723 | 1.17.2.2 | 调试 | 3d | 2024-02-27 | 2024-02-29 | 722 | 73d | 0d | 程序员2; 软件测试工程师2 | 48h | 7,000 |
| 724 | 1.17.2.3 | 执行单元测试 | 1d | 2024-03-01 | 2024-03-01 | 723 | 73d | 0d | 软件测试工程师2; 软件设计师2 | 16h | 3,300 |
| 725 | 1.17.2.4 | 撰写单元测试报告 | 1d | 2024-03-04 | 2024-03-04 | 724 | 73d | 0d | 软件评测师2; 配置管理员2 | 16h | 3,150 |
| 726 | 1.17.2.5 | 评审 | 1d | 2024-03-05 | 2024-03-05 | 725 | 73d |  | 项目经理; 软件设计师1; 软件测试工程师1; 软件评测师1; 程序员1; 数据库建模师1; 系统分析员1; 系统架构师1; UI设计师1; 高级程序员1; 技术支持工程师1( 售后); 技术支持工程师2（售前）; 配置管理员1 | 104h | 23,250 |
| 727 | 1.17.3 | **完成资源管理编码** | 9d | 2024-02-22 | 2024-03-05 | 713 | 73d |  |  | 424h | 78,350 |
| 728 | 1.17.3.1 | 编码 | 3d | 2024-02-22 | 2024-02-26 | 713 | 73d | 0d | UI设计师3; 程序员3; 高级程序员3; 配置管理员3; 软件测试工程师3; 软件评测师3; 软件设计师3; 系统分析员1; 系统架构师1; 数据库建模师3 | 240h | 41,650 |
| 729 | 1.17.3.2 | 调试 | 3d | 2024-02-27 | 2024-02-29 | 728 | 73d | 0d | 程序员3; 软件测试工程师3 | 48h | 7,000 |
| 730 | 1.17.3.3 | 执行单元测试 | 1d | 2024-03-01 | 2024-03-01 | 729 | 73d | 0d | 软件测试工程师3; 软件设计师3 | 16h | 3,300 |
| 731 | 1.17.3.4 | 撰写单元测试报告 | 1d | 2024-03-04 | 2024-03-04 | 730 | 73d | 0d | 配置管理员3; 软件评测师3 | 16h | 3,150 |
| 732 | 1.17.3.5 | 评审 | 1d | 2024-03-05 | 2024-03-05 | 731 | 73d |  | 项目经理; 软件设计师1; 软件测试工程师1; 软件评测师1; 程序员1; 数据库建模师1; 系统分析员1; 系统架构师1; UI设计师1; 高级程序员1; 技术支持工程师1( 售后); 技术支持工程师2（售前）; 配置管理员1 | 104h | 23,250 |
| 733 | 1.17.4 | **完成客服管理编码** | 9d | 2024-02-22 | 2024-03-05 | 712 | 73d |  |  | 376h | 68,550 |
| 734 | 1.17.4.1 | 编码 | 3d | 2024-02-22 | 2024-02-26 | 712 | 73d | 0d | UI设计师4; 程序员4; 高级程序员4; 配置管理员4; 软件测试工程师4; 软件评测师4; 软件设计师3; 系统分析员2 | 192h | 31,850 |
| 735 | 1.17.4.2 | 调试 | 3d | 2024-02-27 | 2024-02-29 | 734 | 73d | 0d | 程序员4; 软件测试工程师4 | 48h | 7,000 |
| 736 | 1.17.4.3 | 执行单元测试 | 1d | 2024-03-01 | 2024-03-01 | 735 | 73d | 0d | 软件测试工程师4; 软件设计师4 | 16h | 3,300 |
| 737 | 1.17.4.4 | 撰写单元测试报告 | 1d | 2024-03-04 | 2024-03-04 | 736 | 73d | 0d | 配置管理员4; 软件评测师4 | 16h | 3,150 |
| 738 | 1.17.4.5 | 评审 | 1d | 2024-03-05 | 2024-03-05 | 737 | 73d |  | 项目经理; 软件设计师1; 软件测试工程师1; 软件评测师1; 程序员1; 数据库建模师1; 系统分析员1; 系统架构师1; UI设计师1; 高级程序员1; 技术支持工程师1( 售后); 技术支持工程师2（售前）; 配置管理员1 | 104h | 23,250 |

| ID | WBS | Task | Duration | Start | Finish | Predecessors | Total slack | Free slack | Resources | Work | Cost |
| --- | --- | --- | --- | --- | --- | --- | --- | --- | --- | --- | --- |
| 739 | 1.17.5 | **完成园区维护编码** | 9d | 2024-02-22 | 2024-03-05 | 712 | 73d |  |  | 424h | 78,650 |
| 740 | 1.17.5.1 | 编码 | 3d | 2024-02-22 | 2024-02-26 | 712 | 73d | 0d | UI设计师5; 程序员5; 高级程序员5; 配置管理员5; 软件测试工程师5; 软件评测师5; 软件设计师5; 数据库建模师5; 系统分析员1; 系统架构师1 | 240h | 41,650 |
| 741 | 1.17.5.2 | 调试 | 3d | 2024-02-27 | 2024-02-29 | 740 | 73d | 0d | 程序员5; 软件测试工程师5 | 48h | 7,000 |
| 742 | 1.17.5.3 | 执行单元测试 | 1d | 2024-03-01 | 2024-03-01 | 741 | 73d | 0d | 软件评测师5; 软件设计师5 | 16h | 3,600 |
| 743 | 1.17.5.4 | 撰写单元测试报告 | 1d | 2024-03-04 | 2024-03-04 | 742 | 73d | 0d | 配置管理员5; 软件评测师5 | 16h | 3,150 |
| 744 | 1.17.5.5 | 评审 | 1d | 2024-03-05 | 2024-03-05 | 743 | 73d |  | 项目经理; 软件设计师1; 软件测试工程师1; 软件评测师1; 程序员1; 数据库建模师1; 系统分析员1; 系统架构师1; UI设计师1; 高级程序员1; 技术支持工程师1( 售后); 技术支持工程师2（售前）; 配置管理员1 | 104h | 23,250 |
| 745 | 1.17.6 | **完成园区环境编码** | 9d | 2024-02-22 | 2024-03-05 | 712 | 0d |  |  | 408h | 75,200 |
| 746 | 1.17.6.1 | 编码 | 3d | 2024-02-22 | 2024-02-26 | 712 | 0d |  | UI设计师1; 程序员1; 高级程序员1; 配置管理员1; 软件测试工程师1; 软件评测师1; 软件设计师1; 系统分析员2; 系统架构师2; 数据库建模师1 | 240h | 41,650 |
| 747 | 1.17.6.2 | 调试 | 3d | 2024-02-27 | 2024-02-29 | 746 | 0d |  | 程序员1; 软件测试工程师1 | 48h | 7,000 |
| 748 | 1.17.6.3 | 执行单元测试 | 1d | 2024-03-01 | 2024-03-01 | 747 | 0d |  | 软件测试工程师1 | 8h | 1,500 |
| 749 | 1.17.6.4 | 撰写单元测试报告 | 1d | 2024-03-04 | 2024-03-04 | 748 | 0d |  | 软件评测师1 | 8h | 1,800 |
| 750 | 1.17.6.5 | 评审 | 1d | 2024-03-05 | 2024-03-05 | 749 | 0d |  | 项目经理; 软件设计师1; 软件测试工程师1; 软件评测师1; 程序员1; 数据库建模师1; 系统分析员1; 系统架构师1; UI设计师1; 高级程序员1; 技术支持工程师1( 售后); 技术支持工程师2（售前）; 配置管理员1 | 104h | 23,250 |
| 751 | 1.17.7 | **完成园区秩序编码** | 9d | 2024-03-06 | 2024-03-18 | 750 | 64d |  |  | 424h | 78,350 |
| 752 | 1.17.7.1 | 编码 | 3d | 2024-03-06 | 2024-03-08 | 750 | 64d | 0d | UI设计师2; 程序员2; 高级程序员2; 软件测试工程师2; 软件评测师2; 软件设计师2; 配置管理员2; 系统分析员1; 系统架构师1; 数据库建模师2 | 240h | 41,650 |
| 753 | 1.17.7.2 | 调试 | 3d | 2024-03-11 | 2024-03-13 | 752 | 64d | 0d | 程序员2; 软件测试工程师2 | 48h | 7,000 |
| 754 | 1.17.7.3 | 执行单元测试 | 1d | 2024-03-14 | 2024-03-14 | 753 | 64d | 0d | 软件测试工程师2; 软件设计师2 | 16h | 3,300 |
| 755 | 1.17.7.4 | 撰写单元测试报告 | 1d | 2024-03-15 | 2024-03-15 | 754 | 64d | 0d | 软件评测师2; 配置管理员2 | 16h | 3,150 |
| 756 | 1.17.7.5 | 评审 | 1d | 2024-03-18 | 2024-03-18 | 755 | 64d |  | 项目经理; 软件设计师1; 软件测试工程师1; 软件评测师1; 程序员1; 数据库建模师1; 系统分析员1; 系统架构师1; UI设计师1; 高级程序员1; 技术支持工程师1( 售后); 技术支持工程师2（售前）; 配置管理员1 | 104h | 23,250 |
| 757 | 1.17.8 | **完成行政管理编码** | 9d | 2024-03-06 | 2024-03-18 | 750 | 64d |  |  | 424h | 78,350 |
| 758 | 1.17.8.1 | 编码 | 3d | 2024-03-06 | 2024-03-08 | 750 | 64d | 0d | UI设计师3; 程序员3; 高级程序员3; 配置管理员3; 软件测试工程师3; 软件评测师3; 软件设计师3; 系统分析员1; 系统架构师1; 数据库建模师3 | 240h | 41,650 |
| 759 | 1.17.8.2 | 调试 | 3d | 2024-03-11 | 2024-03-13 | 758 | 64d | 0d | 程序员3; 软件测试工程师3 | 48h | 7,000 |
| 760 | 1.17.8.3 | 执行单元测试 | 1d | 2024-03-14 | 2024-03-14 | 759 | 64d | 0d | 软件测试工程师3; 软件设计师3 | 16h | 3,300 |
| 761 | 1.17.8.4 | 撰写单元测试报告 | 1d | 2024-03-15 | 2024-03-15 | 760 | 64d | 0d | 配置管理员3; 软件评测师3 | 16h | 3,150 |
| 762 | 1.17.8.5 | 评审 | 1d | 2024-03-18 | 2024-03-18 | 761 | 64d |  | 项目经理; 软件设计师1; 软件测试工程师1; 软件评测师1; 程序员1; 数据库建模师1; 系统分析员1; 系统架构师1; UI设计师1; 高级程序员1; 技术支持工程师1( 售后); 技术支持工程师2（售前）; 配置管理员1 | 104h | 23,250 |

| ID | WBS | Task | Duration | Start | Finish | Predecessors | Total slack | Free slack | Resources | Work | Cost |
| --- | --- | --- | --- | --- | --- | --- | --- | --- | --- | --- | --- |
| 763 | 1.17.9 | **完成财务管理编码** | 9d | 2024-03-06 | 2024-03-18 | 750 | 64d |  |  | 376h | 68,550 |
| 764 | 1.17.9.1 | 编码 | 3d | 2024-03-06 | 2024-03-08 | 750 | 64d | 0d | UI设计师4; 程序员4; 高级程序员4; 配置管理员4; 软件测试工程师4; 软件评测师4; 软件设计师3; 系统分析员2 | 192h | 31,850 |
| 765 | 1.17.9.2 | 调试 | 3d | 2024-03-11 | 2024-03-13 | 764 | 64d | 0d | 程序员4; 软件测试工程师4 | 48h | 7,000 |
| 766 | 1.17.9.3 | 执行单元测试 | 1d | 2024-03-14 | 2024-03-14 | 765 | 64d | 0d | 软件测试工程师4; 软件设计师4 | 16h | 3,300 |
| 767 | 1.17.9.4 | 撰写单元测试报告 | 1d | 2024-03-15 | 2024-03-15 | 766 | 64d | 0d | 配置管理员4; 软件评测师4 | 16h | 3,150 |
| 768 | 1.17.9.5 | 评审 | 1d | 2024-03-18 | 2024-03-18 | 767 | 64d |  | 项目经理; 软件设计师1; 软件测试工程师1; 软件评测师1; 程序员1; 数据库建模师1; 系统分析员1; 系统架构师1; UI设计师1; 高级程序员1; 技术支持工程师1( 售后); 技术支持工程师2（售前）; 配置管理员1 | 104h | 23,250 |
| 769 | 1.17.10 | **完成业主之家编码** | 9d | 2024-03-06 | 2024-03-18 | 750 | 0d |  |  | 424h | 78,650 |
| 770 | 1.17.10.1 | 编码 | 3d | 2024-03-06 | 2024-03-08 | 750 | 0d |  | UI设计师5; 程序员5; 高级程序员5; 配置管理员5; 软件测试工程师5; 软件评测师5; 软件设计师5; 数据库建模师5; 系统分析员1; 系统架构师1 | 240h | 41,650 |
| 771 | 1.17.10.2 | 调试 | 3d | 2024-03-11 | 2024-03-13 | 770 | 0d |  | 程序员5; 软件测试工程师5 | 48h | 7,000 |
| 772 | 1.17.10.3 | 执行单元测试 | 1d | 2024-03-14 | 2024-03-14 | 771 | 0d |  | 软件评测师5; 软件设计师5 | 16h | 3,600 |
| 773 | 1.17.10.4 | 撰写单元测试报告 | 1d | 2024-03-15 | 2024-03-15 | 772 | 0d |  | 配置管理员5; 软件评测师5 | 16h | 3,150 |
| 774 | 1.17.10.5 | 评审 | 1d | 2024-03-18 | 2024-03-18 | 773 | 0d |  | 项目经理; 软件设计师1; 软件测试工程师1; 软件评测师1; 程序员1; 数据库建模师1; 系统分析员1; 系统架构师1; UI设计师1; 高级程序员1; 技术支持工程师1( 售后); 技术支持工程师2（售前）; 配置管理员1 | 104h | 23,250 |
| 775 | 1.17.11 | **完成维护园区（微信小程序）编码** | 9d | 2024-03-19 | 2024-03-29 | 774 | 55d |  |  | 432h | 79,400 |
| 776 | 1.17.11.1 | 编码 | 3d | 2024-03-19 | 2024-03-21 | 774 | 55d | 0d | UI设计师1; 程序员1; 高级程序员1; 配置管理员1; 软件测试工程师1; 软件评测师1; 软件设计师1; 系统分析员2; 系统架构师2; 数据库建模师1 | 240h | 41,650 |
| 777 | 1.17.11.2 | 调试 | 3d | 2024-03-22 | 2024-03-26 | 776 | 55d | 0d | 程序员1; 软件测试工程师1; 高级程序员1 | 72h | 11,200 |
| 778 | 1.17.11.3 | 执行单元测试 | 1d | 2024-03-27 | 2024-03-27 | 777 | 55d | 0d | 软件测试工程师1 | 8h | 1,500 |
| 779 | 1.17.11.4 | 撰写单元测试报告 | 1d | 2024-03-28 | 2024-03-28 | 778 | 55d | 0d | 软件评测师1 | 8h | 1,800 |
| 780 | 1.17.11.5 | 评审 | 1d | 2024-03-29 | 2024-03-29 | 779 | 55d |  | 项目经理; 软件设计师1; 软件测试工程师1; 软件评测师1; 程序员1; 数据库建模师1; 系统分析员1; 系统架构师1; UI设计师1; 高级程序员1; 技术支持工程师1( 售后); 技术支持工程师2（售前）; 配置管理员1 | 104h | 23,250 |
| 781 | 1.17.12 | **完成园区环境（微信小程序）编码** | 9d | 2024-03-19 | 2024-03-29 | 774 | 55d |  |  | 448h | 82,550 |
| 782 | 1.17.12.1 | 编码 | 3d | 2024-03-19 | 2024-03-21 | 774 | 55d | 0d | UI设计师2; 程序员2; 高级程序员2; 软件测试工程师2; 软件评测师2; 软件设计师2; 配置管理员2; 系统分析员1; 系统架构师1; 数据库建模师2 | 240h | 41,650 |
| 783 | 1.17.12.2 | 调试 | 3d | 2024-03-22 | 2024-03-26 | 782 | 55d | 0d | 程序员2; 软件测试工程师2; 高级程序员2 | 72h | 11,200 |
| 784 | 1.17.12.3 | 执行单元测试 | 1d | 2024-03-27 | 2024-03-27 | 783 | 55d | 0d | 软件测试工程师2; 软件设计师2 | 16h | 3,300 |
| 785 | 1.17.12.4 | 撰写单元测试报告 | 1d | 2024-03-28 | 2024-03-28 | 784 | 55d | 0d | 软件评测师2; 配置管理员2 | 16h | 3,150 |
| 786 | 1.17.12.5 | 评审 | 1d | 2024-03-29 | 2024-03-29 | 785 | 55d |  | 项目经理; 软件设计师1; 软件测试工程师1; 软件评测师1; 程序员1; 数据库建模师1; 系统分析员1; 系统架构师1; UI设计师1; 高级程序员1; 技术支持工程师1( 售后); 技术支持工程师2（售前）; 配置管理员1 | 104h | 23,250 |

| ID | WBS | Task | Duration | Start | Finish | Predecessors | Total slack | Resources | Work | Cost |
| --- | --- | --- | --- | --- | --- | --- | --- | --- | --- | --- |
| 787 | 1.17.13 | **完成行政管理(微信小程序)编码** | 15d | 2024-03-19 | 2024-04-08 | 774 | 0d |  | 448h | 82,550 |
| 788 | 1.17.13.1 | 编码 | 3d | 2024-03-19 | 2024-03-21 | 774 | 0d | UI设计师3; 程序员3; 高级程序员3; 配置管理员3; 软件测试工程师3; 软件评测师3; 软件设计师3; 系统分析员1; 系统架构师1; 数据库建模师3 | 240h | 41,650 |
| 789 | 1.17.13.2 | 调试 | 3d | 2024-03-22 | 2024-03-26 | 788 | 0d | 程序员3; 软件测试工程师3; 高级程序员3 | 72h | 11,200 |
| 790 | 1.17.13.3 | 执行单元测试 | 1d | 2024-03-27 | 2024-03-27 | 789 | 0d | 软件测试工程师3; 软件设计师3 | 16h | 3,300 |
| 791 | 1.17.13.4 | 撰写单元测试报告 | 1d | 2024-03-28 | 2024-03-28 | 790 | 0d | 配置管理员3; 软件评测师3 | 16h | 3,150 |
| 792 | 1.17.13.5 | 评审 | 1d | 2024-03-29 | 2024-03-29 | 791 | 0d | 项目经理; 软件设计师1; 软件测试工程师1; 软件评测师1; 程序员1; 数据库建模师1; 系统分析员1; 系统架构师1; UI设计师1; 高级程序员1; 技术支持工程师1( 售后); 技术支持工程师2（售前）; 配置管理员1 | 104h | 23,250 |
| 793 | 1.17.13.6 | 虚任务 | 6d | 2024-04-01 | 2024-04-08 | 792 | 0d |  |  |  |
| 794 | 1.18 | **集成测试** | 7d | 2024-04-09 | 2024-04-17 | 793 | 0d |  | 224h | 37,750 |
| 795 | 1.18.1 | 执行集成测试计划 | 2d | 2024-04-09 | 2024-04-10 | 793 | 0d | UI设计师1; 程序员1; 高级程序员1; 技术支持工程师1（售前）; 配置管理员1; 软件测试工程师1; 软件评测师1; 软件设计师1; 数据库建模师1; 系统分析员1; 系统架构师1; 项目经理; 用户 | 208h | 35,500 |
| 796 | 1.18.2 | 撰写集成测试报告 | 2d | 2024-04-11 | 2024-04-12 | 795 | 0d | 配置管理员1 | 16h | 2,250 |
| 797 | 1.18.3 | 虚任务 | 3d | 2024-04-15 | 2024-04-17 | 796 | 42d |  |  |  |
| 798 | 1.19 | **系统测试** | 16d | 2024-04-15 | 2024-05-06 | 796 | 0d |  | 912h | 151,350 |
| 799 | 1.19.1 | 撰写系统测试计划 | 3d | 2024-04-15 | 2024-04-17 | 796 | 0d | 配置管理员1; 软件测试工程师1; 软件评测师1; 软件设计师1; 系统分析员1; 系统架构师1; 项目经理; 用户 | 192h | 29,750 |
| 800 | 1.19.2 | 撰写系统测试测试用例 | 3d | 2024-04-18 | 2024-04-22 | 799 | 0d | 软件评测师1; 系统分析员1; 系统架构师1; 项目经理; 用户 | 120h | 18,900 |
| 801 | 1.19.3 | 执行系统测试 | 3d | 2024-04-23 | 2024-04-25 | 800 | 0d | 软件测试工程师1; 软件测试工程师2; 软件测试工程师3; 软件测试工程师4; 软件测试工程师5; 软件评测师1; 软件评测师2; 软件评测师3; 软件评测师4; 软件评测师5; 系统分析员1; 系统架构师1; 项目经理; 用户 | 336h | 53,200 |
| 802 | 1.19.4 | 撰写系统测试报告 | 2d | 2024-04-26 | 2024-04-29 | 801 | 0d | 配置管理员1; 配置管理员2; 配置管理员3; 配置管理员4; 配置管理员5; 软件评测师1; 软件评测师2; 软件评测师3; 软件评测师4; 软件评测师5 | 160h | 26,250 |
| 803 | 1.19.5 | 评审 | 1d | 2024-04-30 | 2024-04-30 | 802 | 0d | 项目经理; 软件设计师1; 软件测试工程师1; 软件评测师1; 程序员1; 数据库建模师1; 系统分析员1; 系统架构师1; UI设计师1; 高级程序员1; 技术支持工程师1( 售后); 技术支持工程师2（售前）; 配置管理员1 | 104h | 23,250 |
| 804 | 1.19.6 | 虚任务 | 4d | 2024-05-01 | 2024-05-06 | 803 | 29d |  |  |  |
| 805 | 1.20 | **验收测试** | 23d | 2024-05-01 | 2024-05-31 | 803 | 0d |  | 1728h | 261,150 |
| 806 | 1.20.1 | 撰写验收测试计划 | 2d | 2024-05-01 | 2024-05-02 | 803 | 0d | 配置管理员1; 软件测试工程师1; 软件评测师1; 软件设计师1; 系统分析员1; 系统架构师1; 项目经理; 用户 | 128h | 21,250 |
| 807 | 1.20.2 | 撰写验收测试测试用例 | 5d | 2024-05-03 | 2024-05-09 | 806 | 0d | 软件评测师1; 系统分析员1; 系统架构师1; 项目经理; 用户 | 200h | 29,700 |
| 808 | 1.20.3 | 执行验收测试 | 8d | 2024-05-10 | 2024-05-21 | 807 | 0d | 软件测试工程师1; 软件测试工程师2; 软件测试工程师3; 软件测试工程师4; 软件测试工程师5; 软件评测师1; 软件评测师2; 软件评测师3; 软件评测师4; 软件评测师5; 系统分析员1; 系统架构师1; 项目经理; 用户 | 896h | 129,200 |
| 809 | 1.20.4 | 撰写验收测试报告 | 5d | 2024-05-22 | 2024-05-28 | 808 | 0d | 配置管理员1; 配置管理员2; 配置管理员3; 配置管理员4; 配置管理员5; 软件评测师1; 软件评测师2; 软件评测师3; 软件评测师4; 软件评测师5 | 400h | 57,750 |
| 810 | 1.20.5 | 评审 | 1d | 2024-05-29 | 2024-05-29 | 809 | 0d | 项目经理; 软件设计师1; 软件测试工程师1; 软件评测师1; 程序员1; 数据库建模师1; 系统分析员1; 系统架构师1; UI设计师1; 高级程序员1; 技术支持工程师1( 售后); 技术支持工程师2（售前）; 配置管理员1 | 104h | 23,250 |
| 811 | 1.20.6 | 虚任务 | 2d | 2024-05-30 | 2024-05-31 | 810 | 10d |  |  |  |

| ID | WBS | Task | Duration | Start | Finish | Predecessors | Total slack | Resources | Work | Cost |
| --- | --- | --- | --- | --- | --- | --- | --- | --- | --- | --- |
| 812 | 1.21 | **项目结项管理** | 12d | 2024-05-30 | 2024-06-14 | 810 | 0d |  | 680h | 107,900 |
| 813 | 1.21.1 | 制定项目结项管理计划 | 4d | 2024-05-30 | 2024-06-04 | 810 | 0d | 软件评测师1; 系统分析员1; 系统架构师1; 项目经理; 用户; 配置管理员1 | 192h | 28,350 |
| 814 | 1.21.2 | 执行项目结项管理计划 | 5d | 2024-06-05 | 2024-06-11 | 813 | 0d | 软件评测师1; 软件评测师2; 软件评测师3; 软件评测师4; 软件评测师5; 系统分析员1; 系统分析员2; 系统架构师1; 系统架构师2; 项目经理; 用户 | 440h | 71,500 |
| 815 | 1.21.3 | 撰写项目总结报告 | 3d | 2024-06-12 | 2024-06-14 | 814 | 0d | 配置管理员1; 项目经理 | 48h | 8,050 |
